# Islington - Queen's Road - 9x 50kW DC Rapid Installation

Schedule from MS Project XML, 2023-02-06 to 2025-05-08, status date 2025-05-08, A marks actual dates.

## Resources

| Resource | Rate |
| --- | --- |
| Project Manager | 85 |
| Civil Engineer | 75 |
| Electrical Engineer | 78 |
| Site Surveyor | 55 |
| Permit Coordinator | 50 |
| Groundworks Crew | 45 |
| Electrical Contractor | 65 |
| Network Commissioning Tech | 60 |
| Traffic Management Officer | 48 |
| QA Inspector | 58 |
| Health & Safety Officer | 52 |
| DNO Liaison | 70 |

## Schedule

| ID | WBS | Task | Type | Duration | Start | Finish | Predecessors | Complete | Baseline start | Baseline finish | Baseline duration | Resources | Cost | Baseline cost | Actual cost |
| --- | --- | --- | --- | --- | --- | --- | --- | --- | --- | --- | --- | --- | --- | --- | --- |
| 2 | 2 | **Initiation & Planning** |  |  | 2023-02-06 | 2025-05-08 |  |  |  |  |  |  |  |  |  |
| 3 | 1.2 | Site Identification & Assessment |  | 10d | 2023-02-06 A | 2023-02-20 A |  | 100% | 2023-02-06 | 2023-02-15 | 7d | Project Manager; Site Surveyor | 31.38 | 24.25 | 31.38 |
| 4 | 1.3 | Feasibility Study |  | 14d | 2023-02-21 A | 2023-03-13 A | 3 | 100% | 2023-02-21 | 2023-03-09 | 12d | Civil Engineer; Site Surveyor | 69.77 | 53.91 | 69.77 |
| 5 | 1.4 | Stakeholder Consultation |  | 24d | 2023-03-16 A | 2023-04-19 A | 4 | 100% | 2023-03-14 | 2023-04-04 | 15d | Project Manager; Permit Coordinator | 93.57 | 72.31 | 93.57 |
| 6 | 1.5 | DNO Pre-Application |  | 9d | 2023-04-20 A | 2023-05-03 A | 5 | 100% | 2023-04-20 | 2023-05-01 | 7d | Electrical Engineer; DNO Liaison | 35.23 | 27.23 | 35.23 |
| 7 | 1.6 | Planning Approval Milestone | milestone | 0d | 2023-05-04 A | 2023-05-04 A | 6 | 100% | 2023-05-04 | 2023-05-04 | 1d | Project Manager | 6.47 | 5 | 6.47 |
| 8 | 8 | **Detailed Design** |  |  | 2023-02-06 | 2025-05-08 |  |  |  |  |  |  |  |  |  |
| 9 | 1.8 | Electrical Design & Load Calculations |  | 43d | 2023-05-09 A | 2023-07-07 A |  | 100% | 2023-05-04 | 2023-05-25 | 15d | Electrical Engineer | 106.87 | 60.19 | 106.87 |
| 10 | 1.9 | Civil & Structural Design |  | 34d | 2023-07-10 A | 2023-08-25 A | 9 | 100% | 2023-07-10 | 2023-07-26 | 12d | Civil Engineer | 102.11 | 57.22 | 102.11 |
| 11 | 1.10 | Traffic Management Plan |  | 10d | 2023-08-28 A | 2023-09-11 A | 10 | 100% | 2023-08-28 | 2023-09-06 | 7d | Traffic Management Officer | 44.74 | 34.57 | 44.74 |
| 12 | 1.11 | Design Review & Sign-off |  | 29d | 2023-09-14 A | 2023-10-25 A | 11 | 100% | 2023-09-12 | 2023-09-18 | 4d | Project Manager; Civil Engineer; Electrical Engineer | 27.65 | 14.45 | 27.65 |
| 13 | 1.12 | Design Complete Milestone | milestone | 0d | 2023-10-26 A | 2023-10-26 A | 12 | 100% | 2023-10-26 | 2023-10-26 | 1d | Project Manager | 9.04 | 5 | 9.04 |
| 14 | 14 | **Procurement & Permits** |  |  | 2023-02-06 | 2025-05-08 |  |  |  |  |  |  |  |  |  |
| 15 | 1.14 | Charger Equipment Procurement |  | 84d | 2023-11-06 A | 2024-03-01 A |  | 100% | 2023-10-26 | 2023-12-08 | 31d | Project Manager | 243.5 | 120.68 | 243.5 |
| 16 | 1.15 | Switchgear & Cable Procurement |  | 79d | 2024-03-19 A | 2024-07-08 A | 15 | 100% | 2024-03-04 | 2024-04-04 | 23d | Electrical Engineer | 164.53 | 76.4 | 164.53 |
| 17 | 1.16 | Highway Permit Application (S50/S171) |  | 36d | 2024-07-15 A | 2024-09-03 A | 16 | 100% | 2024-07-09 | 2024-08-09 | 23d | Permit Coordinator | 89.71 | 69.33 | 89.71 |
| 18 | 1.17 | DNO Connection Agreement |  | 54d | 2024-09-05 A | 2024-11-20 A | 17 | 100% | 2024-09-04 | 2024-10-17 | 31d | Electrical Engineer; DNO Liaison | 148.99 | 115.14 | 148.99 |
| 19 | 1.18 | Permits Secured Milestone | milestone | 0d | 2024-11-21 A | 2024-11-21 A | 18 | 100% | 2024-11-21 | 2024-11-21 | 1d | Permit Coordinator | 6.8 | 5.25 | 6.8 |
| 20 | 20 | **Construction & Installation** |  |  | 2023-02-06 | 2025-05-08 |  |  |  |  |  |  |  |  |  |
| 21 | 1.20 | Traffic Management Setup |  | 3d | 2024-11-21 A | 2024-11-26 A |  | 100% | 2024-11-21 | 2024-11-26 | 3d | Traffic Management Officer; Groundworks Crew | 21.44 | 16.57 | 21.44 |
| 22 | 1.21 | Excavation & Trenching |  | 18d | 2024-12-02 A | 2024-12-26 A | 21 | 100% | 2024-11-27 | 2024-12-06 | 7d | Groundworks Crew | 52.49 | 27.06 | 52.49 |
| 23 | 1.22 | Cable Ducting Installation |  | 12d | 2024-12-30 A | 2025-01-15 A | 22 | 100% | 2024-12-27 | 2025-01-06 | 6d | Groundworks Crew; Electrical Contractor | 34.07 | 22.76 | 34.07 |
| 24 | 1.23 | Foundation & Bollard Base |  | 5d | 2025-01-16 A | 2025-01-23 A | 23 | 100% | 2025-01-16 | 2025-01-22 | 4d | Groundworks Crew | 18.95 | 14.65 | 18.95 |
| 25 | 1.24 | Electrical Cabling & Termination |  | 11d | 2025-01-24 A | 2025-02-10 A | 24 | 100% | 2025-01-24 | 2025-02-04 | 7d | Electrical Contractor | 49.19 | 38.01 | 49.19 |
| 26 | 1.25 | Charger Unit Mounting |  | 11d | 2025-02-17 A | 2025-03-04 A | 25 | 100% | 2025-02-11 | 2025-02-14 | 3d | Electrical Contractor; Network Commissioning Tech | 25.01 | 15.07 | 25.01 |
| 27 | 1.26 | Reinstatement & Making Good |  | 6d | 2025-03-06 A | 2025-03-14 A | 26 | 100% | 2025-03-05 | 2025-03-11 | 4d | Groundworks Crew | 18.83 | 14.55 | 18.83 |
| 28 | 1.27 | Construction Complete Milestone | milestone | 0d | 2025-03-17 A | 2025-03-17 A | 27 | 100% | 2025-03-17 | 2025-03-17 | 1d | Project Manager | 6.47 | 5 | 6.47 |

Notes:
- 9: Charger equipment delivery delayed - supplier backlog. Design amendments required following review. Contaminated ground discovered - remediation required.
- 10: Charger equipment delivery delayed - supplier backlog. Design amendments required following review. Contaminated ground discovered - remediation required.
- 12: Charger equipment delivery delayed - supplier backlog. Design amendments required following review. Contaminated ground discovered - remediation required.
- 13: Charger equipment delivery delayed - supplier backlog. Design amendments required following review. Contaminated ground discovered - remediation required.
- 15: Charger equipment delivery delayed - supplier backlog. Design amendments required following review. Contaminated ground discovered - remediation required.
- 16: Charger equipment delivery delayed - supplier backlog. Design amendments required following review. Contaminated ground discovered - remediation required.
- 22: Charger equipment delivery delayed - supplier backlog. Design amendments required following review. Contaminated ground discovered - remediation required.
- 26: Charger equipment delivery delayed - supplier backlog. Design amendments required following review. Contaminated ground discovered - remediation required.

| ID | WBS | Task | Type | Duration | Start | Finish | Predecessors | Complete | Baseline start | Baseline finish | Baseline duration | Resources | Cost | Baseline cost | Actual cost |
| --- | --- | --- | --- | --- | --- | --- | --- | --- | --- | --- | --- | --- | --- | --- | --- |
| 29 | 29 | **Commissioning & Handover** |  |  | 2023-02-06 | 2025-05-08 |  |  |  |  |  |  |  |  |  |
| 30 | 1.29 | Electrical Testing & Certification |  | 5d | 2025-03-17 A | 2025-03-24 A |  | 100% | 2025-03-17 | 2025-03-21 | 4d | Electrical Contractor; QA Inspector | 18.68 | 14.43 | 18.68 |
| 31 | 1.30 | Network Connectivity & Software Config |  | 4d | 2025-03-25 A | 2025-03-31 A | 30 | 100% | 2025-03-25 | 2025-03-28 | 3d | Network Commissioning Tech | 21.5 | 16.62 | 21.5 |
| 32 | 1.31 | DNO Energisation |  | 8d | 2025-04-01 A | 2025-04-11 A | 31 | 100% | 2025-04-01 | 2025-04-10 | 7d | Electrical Engineer; DNO Liaison | 29.05 | 22.45 | 29.05 |
| 33 | 1.32 | User Acceptance Testing |  | 5d | 2025-04-15 A | 2025-04-22 A | 32 | 100% | 2025-04-14 | 2025-04-17 | 3d | Project Manager; QA Inspector | 15.54 | 12.01 | 15.54 |
| 34 | 1.33 | Health & Safety Sign-off |  | 1d | 2025-04-23 A | 2025-04-24 A | 33 | 100% | 2025-04-23 | 2025-04-24 | 1d | Health & Safety Officer | 6.47 | 5 | 6.47 |
| 35 | 1.34 | As-Built Documentation |  | 7d | 2025-04-28 A | 2025-05-07 A | 34 | 100% | 2025-04-25 | 2025-05-01 | 4d | Civil Engineer; Electrical Engineer | 19.76 | 15.27 | 19.76 |
| 36 | 1.35 | Project Handover Milestone | milestone | 0d | 2025-05-08 A | 2025-05-08 A | 35 | 100% | 2025-05-08 | 2025-05-08 | 1d | Project Manager | 6.47 | 5 | 6.47 |
