# Wandsworth - Station Road - 7x 50kW DC Rapid Installation

Schedule from MS Project XML, 2023-02-09 to 2025-02-20, status date 2025-02-20, A marks actual dates.

## Resources

| Resource | Rate |
| --- | --- |
| Project Manager | 85 |
| Civil Engineer | 75 |
| Electrical Engineer | 78 |
| Site Surveyor | 55 |
| Permit Coordinator | 50 |
| Groundworks Crew | 45 |
| Electrical Contractor | 65 |
| Network Commissioning Tech | 60 |
| Traffic Management Officer | 48 |
| QA Inspector | 58 |
| Health & Safety Officer | 52 |
| DNO Liaison | 70 |

## Schedule

| ID | WBS | Task | Type | Duration | Start | Finish | Predecessors | Complete | Baseline start | Baseline finish | Baseline duration | Resources | Cost | Baseline cost | Actual cost |
| --- | --- | --- | --- | --- | --- | --- | --- | --- | --- | --- | --- | --- | --- | --- | --- |
| 2 | 2 | **Initiation & Planning** |  |  | 2023-02-09 | 2025-02-20 |  |  |  |  |  |  |  |  |  |
| 3 | 1.2 | Site Identification & Assessment |  | 9d | 2023-02-09 A | 2023-02-22 A |  | 100% | 2023-02-09 | 2023-02-20 | 7d | Project Manager; Site Surveyor | 28.49 | 20.96 | 28.49 |
| 4 | 1.3 | Feasibility Study |  | 18d | 2023-02-23 A | 2023-03-21 A | 3 | 100% | 2023-02-23 | 2023-03-10 | 11d | Civil Engineer; Site Surveyor | 58.05 | 42.7 | 58.05 |
| 5 | 1.4 | Stakeholder Consultation |  | 20d | 2023-03-22 A | 2023-04-19 A | 4 | 100% | 2023-03-22 | 2023-04-11 | 14d | Project Manager; Permit Coordinator | 68.91 | 50.69 | 68.91 |
| 6 | 1.5 | DNO Pre-Application |  | 10d | 2023-04-21 A | 2023-05-05 A | 5 | 100% | 2023-04-20 | 2023-05-01 | 7d | Electrical Engineer; DNO Liaison | 22.8 | 16.77 | 22.8 |
| 7 | 1.6 | Planning Approval Milestone | milestone | 0d | 2023-05-08 A | 2023-05-08 A | 6 | 100% | 2023-05-08 | 2023-05-08 | 1d | Project Manager | 6.8 | 5 | 6.8 |
| 8 | 8 | **Detailed Design** |  |  | 2023-02-09 | 2025-02-20 |  |  |  |  |  |  |  |  |  |
| 9 | 1.8 | Electrical Design & Load Calculations |  | 40d | 2023-05-17 A | 2023-07-12 A |  | 100% | 2023-05-08 | 2023-05-26 | 14d | Electrical Engineer | 53.87 | 34.16 | 53.87 |
| 10 | 1.9 | Civil & Structural Design |  | 27d | 2023-07-14 A | 2023-08-22 A | 9 | 100% | 2023-07-13 | 2023-07-28 | 11d | Civil Engineer | 64.41 | 38.32 | 64.41 |
| 11 | 1.10 | Traffic Management Plan |  | 10d | 2023-08-23 A | 2023-09-06 A | 10 | 100% | 2023-08-23 | 2023-09-01 | 7d | Traffic Management Officer | 31.68 | 23.3 | 31.68 |
| 12 | 1.11 | Design Review & Sign-off |  | 20d | 2023-09-13 A | 2023-10-11 A | 11 | 100% | 2023-09-07 | 2023-09-13 | 4d | Project Manager; Civil Engineer; Electrical Engineer | 18.4 | 11.53 | 18.4 |
| 13 | 1.12 | Design Complete Milestone | milestone | 0d | 2023-10-12 A | 2023-10-12 A | 12 | 100% | 2023-10-12 | 2023-10-12 | 1d | Project Manager | 7.5 | 5 | 7.5 |
| 14 | 14 | **Procurement & Permits** |  |  | 2023-02-09 | 2025-02-20 |  |  |  |  |  |  |  |  |  |
| 15 | 1.14 | Charger Equipment Procurement |  | 83d | 2023-10-13 A | 2024-02-07 A |  | 100% | 2023-10-12 | 2023-11-21 | 28d | Project Manager | 197.72 | 104.95 | 197.72 |
| 16 | 1.15 | Switchgear & Cable Procurement |  | 72d | 2024-02-12 A | 2024-05-22 A | 15 | 100% | 2024-02-08 | 2024-03-08 | 21d | Electrical Engineer | 109.86 | 69.39 | 109.86 |
| 17 | 1.16 | Highway Permit Application (S50/S171) |  | 45d | 2024-05-30 A | 2024-08-01 A | 16 | 100% | 2024-05-23 | 2024-06-21 | 21d | Permit Coordinator | 89.63 | 63.64 | 89.63 |
| 18 | 1.17 | DNO Connection Agreement |  | 46d | 2024-08-09 A | 2024-10-14 A | 17 | 100% | 2024-08-02 | 2024-09-11 | 28d | Electrical Engineer; DNO Liaison | 155.27 | 114.21 | 155.27 |
| 19 | 1.18 | Permits Secured Milestone | milestone | 0d | 2024-10-22 A | 2024-10-22 A | 18 | 100% | 2024-10-15 | 2024-10-15 | 1d | Permit Coordinator | 7.03 | 5 | 7.03 |
| 20 | 20 | **Construction & Installation** |  |  | 2023-02-09 | 2025-02-20 |  |  |  |  |  |  |  |  |  |
| 21 | 1.20 | Traffic Management Setup |  | 3d | 2024-10-15 A | 2024-10-18 A |  | 100% | 2024-10-15 | 2024-10-17 | 2d | Traffic Management Officer; Groundworks Crew | 10.06 | 7.4 | 10.06 |
| 22 | 1.21 | Excavation & Trenching |  | 15d | 2024-10-22 A | 2024-11-12 A | 21 | 100% | 2024-10-21 | 2024-10-30 | 7d | Groundworks Crew | 42.3 | 24.82 | 42.3 |
| 23 | 1.22 | Cable Ducting Installation |  | 9d | 2024-11-13 A | 2024-11-26 A | 22 | 100% | 2024-11-13 | 2024-11-20 | 5d | Groundworks Crew; Electrical Contractor | 19.41 | 14.28 | 19.41 |
| 24 | 1.23 | Foundation & Bollard Base |  | 7d | 2024-11-27 A | 2024-12-06 A | 23 | 100% | 2024-11-27 | 2024-12-03 | 4d | Groundworks Crew | 17.75 | 13.06 | 17.75 |
| 25 | 1.24 | Electrical Cabling & Termination |  | 10d | 2024-12-09 A | 2024-12-23 A | 24 | 100% | 2024-12-09 | 2024-12-18 | 7d | Electrical Contractor | 36.58 | 26.91 | 36.58 |
| 26 | 1.25 | Charger Unit Mounting |  | 2d | 2024-12-24 A | 2024-12-26 A | 25 | 100% | 2024-12-24 | 2024-12-26 | 2d | Electrical Contractor; Network Commissioning Tech | 8.25 | 6.07 | 8.25 |
| 27 | 1.26 | Reinstatement & Making Good |  | 7d | 2024-12-27 A | 2025-01-07 A | 26 | 100% | 2024-12-27 | 2025-01-02 | 4d | Groundworks Crew | 12.78 | 9.4 | 12.78 |
| 28 | 1.27 | Construction Complete Milestone | milestone | 0d | 2025-01-08 A | 2025-01-08 A | 27 | 100% | 2025-01-08 | 2025-01-08 | 1d | Project Manager | 6.8 | 5 | 6.8 |

Notes:
- 9: Charger equipment delivery delayed - supplier backlog. Permit approval delayed by local authority review backlog. Design amendments required following review. Uncharted utility strike during excavation.
- 10: Charger equipment delivery delayed - supplier backlog. Permit approval delayed by local authority review backlog. Design amendments required following review. Uncharted utility strike during excavation.
- 12: Charger equipment delivery delayed - supplier backlog. Permit approval delayed by local authority review backlog. Design amendments required following review. Uncharted utility strike during excavation.
- 13: Charger equipment delivery delayed - supplier backlog. Permit approval delayed by local authority review backlog. Design amendments required following review. Uncharted utility strike during excavation.
- 15: Charger equipment delivery delayed - supplier backlog. Permit approval delayed by local authority review backlog. Design amendments required following review. Uncharted utility strike during excavation.
- 16: Charger equipment delivery delayed - supplier backlog. Permit approval delayed by local authority review backlog. Design amendments required following review. Uncharted utility strike during excavation.
- 17: Charger equipment delivery delayed - supplier backlog. Permit approval delayed by local authority review backlog. Design amendments required following review. Uncharted utility strike during excavation.
- 19: Charger equipment delivery delayed - supplier backlog. Permit approval delayed by local authority review backlog. Design amendments required following review. Uncharted utility strike during excavation.

| ID | WBS | Task | Type | Duration | Start | Finish | Predecessors | Complete | Baseline start | Baseline finish | Baseline duration | Resources | Cost | Baseline cost | Actual cost |
| --- | --- | --- | --- | --- | --- | --- | --- | --- | --- | --- | --- | --- | --- | --- | --- |
| 29 | 29 | **Commissioning & Handover** |  |  | 2023-02-09 | 2025-02-20 |  |  |  |  |  |  |  |  |  |
| 30 | 1.29 | Electrical Testing & Certification |  | 6d | 2025-01-09 A | 2025-01-17 A |  | 100% | 2025-01-08 | 2025-01-14 | 4d | Electrical Contractor; QA Inspector | 22.52 | 16.56 | 22.52 |
| 31 | 1.30 | Network Connectivity & Software Config |  | 3d | 2025-01-20 A | 2025-01-23 A | 30 | 100% | 2025-01-20 | 2025-01-22 | 2d | Network Commissioning Tech | 11.24 | 8.27 | 11.24 |
| 32 | 1.31 | DNO Energisation |  | 8d | 2025-01-24 A | 2025-02-05 A | 31 | 100% | 2025-01-24 | 2025-02-04 | 7d | Electrical Engineer; DNO Liaison | 25.53 | 18.78 | 25.53 |
| 33 | 1.32 | User Acceptance Testing |  | 2d | 2025-02-06 A | 2025-02-10 A | 32 | 100% | 2025-02-06 | 2025-02-10 | 2d | Project Manager; QA Inspector | 11.11 | 8.17 | 11.11 |
| 34 | 1.33 | Health & Safety Sign-off |  | 1d | 2025-02-11 A | 2025-02-12 A | 33 | 100% | 2025-02-11 | 2025-02-12 | 1d | Health & Safety Officer | 6.8 | 5 | 6.8 |
| 35 | 1.34 | As-Built Documentation |  | 4d | 2025-02-13 A | 2025-02-19 A | 34 | 100% | 2025-02-13 | 2025-02-19 | 4d | Civil Engineer; Electrical Engineer | 18.32 | 13.48 | 18.32 |
| 36 | 1.35 | Project Handover Milestone | milestone | 0d | 2025-02-20 A | 2025-02-20 A | 35 | 100% | 2025-02-20 | 2025-02-20 | 1d | Project Manager | 6.8 | 5 | 6.8 |
