# Hammersmith - Bridge Street - 4x 22kW AC Pedestal Installation

Schedule from MS Project XML, 2023-04-28 to 2024-07-17, status date 2024-07-17, A marks actual dates.

## Resources

| Resource | Rate |
| --- | --- |
| Project Manager | 85 |
| Civil Engineer | 75 |
| Electrical Engineer | 78 |
| Site Surveyor | 55 |
| Permit Coordinator | 50 |
| Groundworks Crew | 45 |
| Electrical Contractor | 65 |
| Network Commissioning Tech | 60 |
| Traffic Management Officer | 48 |
| QA Inspector | 58 |

## Schedule

| ID | WBS | Task | Type | Duration | Start | Finish | Predecessors | Complete | Baseline start | Baseline finish | Baseline duration | Resources | Cost | Baseline cost | Actual cost |
| --- | --- | --- | --- | --- | --- | --- | --- | --- | --- | --- | --- | --- | --- | --- | --- |
| 2 | 2 | **Initiation & Planning** |  |  | 2023-04-28 | 2024-07-17 |  |  |  |  |  |  |  |  |  |
| 3 | 1.2 | Site Identification & Assessment |  | 6d | 2023-04-28 A | 2023-05-08 A |  | 100% | 2023-04-28 | 2023-05-05 | 5d | Project Manager; Site Surveyor | 5.79 | 5 | 5.79 |
| 4 | 1.3 | Feasibility Study |  | 10d | 2023-05-09 A | 2023-05-23 A | 3 | 100% | 2023-05-09 | 2023-05-22 | 9d | Civil Engineer; Site Surveyor | 6.57 | 5.67 | 6.57 |
| 5 | 1.4 | Stakeholder Consultation |  | 14d | 2023-05-24 A | 2023-06-13 A | 4 | 100% | 2023-05-24 | 2023-06-08 | 11d | Project Manager; Permit Coordinator | 13.56 | 11.71 | 13.56 |
| 6 | 1.5 | DNO Pre-Application |  | 5d | 2023-06-14 A | 2023-06-21 A | 5 | 100% | 2023-06-14 | 2023-06-21 | 5d | Electrical Engineer | 6.29 | 5.43 | 6.29 |
| 7 | 1.6 | Planning Approval Milestone | milestone | 0d | 2023-06-22 A | 2023-06-22 A | 6 | 100% | 2023-06-22 | 2023-06-22 | 1d | Project Manager | 5.79 | 5 | 5.79 |
| 8 | 8 | **Detailed Design** |  |  | 2023-04-28 | 2024-07-17 |  |  |  |  |  |  |  |  |  |
| 9 | 1.8 | Electrical Design & Load Calculations |  | 15d | 2023-06-26 A | 2023-07-17 A |  | 100% | 2023-06-22 | 2023-07-07 | 11d | Electrical Engineer | 11.43 | 9.86 | 11.43 |
| 10 | 1.9 | Civil & Structural Design |  | 11d | 2023-07-19 A | 2023-08-03 A | 9 | 100% | 2023-07-18 | 2023-07-31 | 9d | Civil Engineer | 6.15 | 5.31 | 6.15 |
| 11 | 1.10 | Traffic Management Plan |  | 6d | 2023-08-04 A | 2023-08-14 A | 10 | 100% | 2023-08-04 | 2023-08-11 | 5d | Traffic Management Officer | 5.79 | 5 | 5.79 |
| 12 | 1.11 | Design Review & Sign-off |  | 3d | 2023-08-15 A | 2023-08-18 A | 11 | 100% | 2023-08-15 | 2023-08-18 | 3d | Project Manager; Civil Engineer; Electrical Engineer | 5.79 | 5 | 5.79 |
| 13 | 1.12 | Design Complete Milestone | milestone | 0d | 2023-08-21 A | 2023-08-21 A | 12 | 100% | 2023-08-21 | 2023-08-21 | 1d | Project Manager | 5.79 | 5 | 5.79 |
| 14 | 14 | **Procurement & Permits** |  |  | 2023-04-28 | 2024-07-17 |  |  |  |  |  |  |  |  |  |
| 15 | 1.14 | Charger Equipment Procurement |  | 29d | 2023-08-21 A | 2023-09-29 A |  | 100% | 2023-08-21 | 2023-09-21 | 23d | Project Manager | 27.3 | 23.57 | 27.3 |
| 16 | 1.15 | Switchgear & Cable Procurement |  | 23d | 2023-10-05 A | 2023-11-07 A | 15 | 100% | 2023-10-02 | 2023-10-25 | 17d | Electrical Engineer | 15.87 | 13.7 | 15.87 |
| 17 | 1.16 | Highway Permit Application (S50/S171) |  | 45d | 2023-11-17 A | 2024-01-19 A | 16 | 100% | 2023-11-08 | 2023-12-01 | 17d | Permit Coordinator | 20.73 | 17.19 | 20.73 |
| 18 | 1.17 | DNO Connection Agreement |  | 30d | 2024-01-23 A | 2024-03-05 A | 17 | 100% | 2024-01-22 | 2024-02-22 | 23d | Electrical Engineer | 15.72 | 13.57 | 15.72 |
| 19 | 1.18 | Permits Secured Milestone | milestone | 0d | 2024-03-18 A | 2024-03-18 A | 18 | 100% | 2024-03-06 | 2024-03-06 | 1d | Permit Coordinator | 5.99 | 5 | 5.99 |
| 20 | 20 | **Construction & Installation** |  |  | 2023-04-28 | 2024-07-17 |  |  |  |  |  |  |  |  |  |
| 21 | 1.20 | Traffic Management Setup |  | 17d | 2024-03-07 A | 2024-04-01 A |  | 100% | 2024-03-06 | 2024-03-08 | 2d | Traffic Management Officer; Groundworks Crew | 6.65 | 5 | 6.65 |
| 22 | 1.21 | Excavation & Trenching |  | 20d | 2024-04-02 A | 2024-04-30 A | 21 | 100% | 2024-04-02 | 2024-04-09 | 5d | Groundworks Crew | 6.74 | 5.41 | 6.74 |
| 23 | 1.22 | Cable Ducting Installation |  | 4d | 2024-05-01 A | 2024-05-07 A | 22 | 100% | 2024-05-01 | 2024-05-07 | 4d | Groundworks Crew; Electrical Contractor | 5.79 | 5 | 5.79 |
| 24 | 1.23 | Foundation & Bollard Base |  | 12d | 2024-05-08 A | 2024-05-24 A | 23 | 100% | 2024-05-08 | 2024-05-13 | 3d | Groundworks Crew | 6.53 | 5 | 6.53 |
| 25 | 1.24 | Electrical Cabling & Termination |  | 6d | 2024-05-27 A | 2024-06-04 A | 24 | 100% | 2024-05-27 | 2024-06-03 | 5d | Electrical Contractor | 5.79 | 5 | 5.79 |
| 26 | 1.25 | Charger Unit Mounting |  | 2d | 2024-06-05 A | 2024-06-07 A | 25 | 100% | 2024-06-05 | 2024-06-07 | 2d | Electrical Contractor; Network Commissioning Tech | 5.79 | 5 | 5.79 |
| 27 | 1.26 | Reinstatement & Making Good |  | 3d | 2024-06-10 A | 2024-06-13 A | 26 | 100% | 2024-06-10 | 2024-06-13 | 3d | Groundworks Crew | 5.79 | 5 | 5.79 |
| 28 | 1.27 | Construction Complete Milestone | milestone | 0d | 2024-06-14 A | 2024-06-14 A | 27 | 100% | 2024-06-14 | 2024-06-14 | 1d | Project Manager | 5.79 | 5 | 5.79 |

Notes:
- 17: Permit approval delayed by local authority review backlog. Adverse weather conditions halted site works.
- 19: Permit approval delayed by local authority review backlog. Adverse weather conditions halted site works.
- 21: Permit approval delayed by local authority review backlog. Adverse weather conditions halted site works.
- 22: Permit approval delayed by local authority review backlog. Adverse weather conditions halted site works.
- 24: Permit approval delayed by local authority review backlog. Adverse weather conditions halted site works.

| ID | WBS | Task | Type | Duration | Start | Finish | Predecessors | Complete | Baseline start | Baseline finish | Baseline duration | Resources | Cost | Baseline cost | Actual cost |
| --- | --- | --- | --- | --- | --- | --- | --- | --- | --- | --- | --- | --- | --- | --- | --- |
| 29 | 29 | **Commissioning & Handover** |  |  | 2023-04-28 | 2024-07-17 |  |  |  |  |  |  |  |  |  |
| 30 | 1.29 | Electrical Testing & Certification |  | 3d | 2024-06-14 A | 2024-06-19 A |  | 100% | 2024-06-14 | 2024-06-19 | 3d | Electrical Contractor; QA Inspector | 5.79 | 5 | 5.79 |
| 31 | 1.30 | Network Connectivity & Software Config |  | 2d | 2024-06-20 A | 2024-06-24 A | 30 | 100% | 2024-06-20 | 2024-06-24 | 2d | Network Commissioning Tech | 5.79 | 5 | 5.79 |
| 32 | 1.31 | DNO Energisation |  | 6d | 2024-06-25 A | 2024-07-03 A | 31 | 100% | 2024-06-25 | 2024-07-02 | 5d | Electrical Engineer | 5.79 | 5 | 5.79 |
| 33 | 1.32 | User Acceptance Testing |  | 2d | 2024-07-04 A | 2024-07-08 A | 32 | 100% | 2024-07-04 | 2024-07-08 | 2d | Project Manager; QA Inspector | 5.79 | 5 | 5.79 |
| 34 | 1.33 | Health & Safety Sign-off |  | 1d | 2024-07-09 A | 2024-07-10 A | 33 | 100% | 2024-07-09 | 2024-07-10 | 1d |  | 5.79 | 5 | 5.79 |
| 35 | 1.34 | As-Built Documentation |  | 3d | 2024-07-11 A | 2024-07-16 A | 34 | 100% | 2024-07-11 | 2024-07-16 | 3d | Civil Engineer; Electrical Engineer | 5.79 | 5 | 5.79 |
| 36 | 1.35 | Project Handover Milestone | milestone | 0d | 2024-07-17 A | 2024-07-17 A | 35 | 100% | 2024-07-17 | 2024-07-17 | 1d | Project Manager | 5.79 | 5 | 5.79 |
