# Kensington - Park Avenue - 5x 7kW AC Bollard Installation

Schedule from MS Project XML, 2023-09-04 to 2024-12-05, status date 2026-02-13, A marks actual dates.

## Resources

| Resource | Rate |
| --- | --- |
| Project Manager | 85 |
| Civil Engineer | 75 |
| Electrical Engineer | 78 |
| Site Surveyor | 55 |
| Permit Coordinator | 50 |
| Groundworks Crew | 45 |
| Electrical Contractor | 65 |
| Network Commissioning Tech | 60 |
| Traffic Management Officer | 48 |
| QA Inspector | 58 |

## Schedule

| ID | WBS | Task | Type | Duration | Start | Finish | Predecessors | Complete | Remaining | Baseline start | Baseline finish | Baseline duration | Total slack | Resources | Cost | Baseline cost | Actual cost |
| --- | --- | --- | --- | --- | --- | --- | --- | --- | --- | --- | --- | --- | --- | --- | --- | --- | --- |
| 2 | 2 | **Initiation & Planning** |  |  | 2023-09-04 | 2024-12-05 |  |  |  |  |  |  |  |  |  |  |  |
| 3 | 1.2 | Site Identification & Assessment |  | 8d | 2023-09-04 A | 2023-09-14 A |  | 100% |  | 2023-09-04 | 2023-09-12 | 6d |  | Project Manager; Site Surveyor | 5.5 | 5 | 5.5 |
| 4 | 1.3 | Feasibility Study |  | 12d | 2023-09-18 A | 2023-10-04 A | 3 | 100% |  | 2023-09-15 | 2023-09-28 | 9d |  | Civil Engineer; Site Surveyor | 5.5 | 5 | 5.5 |
| 5 | 1.4 | Stakeholder Consultation |  | 17d | 2023-10-09 A | 2023-11-01 A | 4 | 100% |  | 2023-10-05 | 2023-10-23 | 12d |  | Project Manager; Permit Coordinator | 5.5 | 5 | 5.5 |
| 6 | 1.5 | DNO Pre-Application |  | 7d | 2023-11-02 A | 2023-11-13 A | 5 | 100% |  | 2023-11-02 | 2023-11-10 | 6d |  | Electrical Engineer | 5.5 | 5 | 5.5 |
| 7 | 1.6 | Planning Approval Milestone | milestone | 0d | 2023-11-14 A | 2023-11-14 A | 6 | 100% |  | 2023-11-14 | 2023-11-14 | 1d |  | Project Manager | 5.5 | 5 | 5.5 |
| 8 | 8 | **Detailed Design** |  |  | 2023-09-04 | 2024-12-05 |  |  |  |  |  |  |  |  |  |  |  |
| 9 | 1.8 | Electrical Design & Load Calculations |  | 28d | 2023-11-20 A | 2023-12-28 A |  | 100% |  | 2023-11-14 | 2023-11-30 | 12d |  | Electrical Engineer | 6.72 | 5 | 6.72 |
| 10 | 1.9 | Civil & Structural Design |  | 27d | 2024-01-05 A | 2024-02-13 A | 9 | 100% |  | 2023-12-29 | 2024-01-11 | 9d |  | Civil Engineer | 6.21 | 5 | 6.21 |
| 11 | 1.10 | Traffic Management Plan |  | 6d | 2024-02-14 A | 2024-02-22 A | 10 | 100% |  | 2024-02-14 | 2024-02-22 | 6d |  | Traffic Management Officer | 5.5 | 5 | 5.5 |
| 12 | 1.11 | Design Review & Sign-off |  | 17d | 2024-03-01 A | 2024-03-26 A | 11 | 100% |  | 2024-02-23 | 2024-02-28 | 3d |  | Project Manager; Civil Engineer; Electrical Engineer | 6.14 | 5 | 6.14 |
| 13 | 1.12 | Design Complete Milestone | milestone | 0d | 2024-03-29 A | 2024-03-29 A | 12 | 100% |  | 2024-03-27 | 2024-03-27 | 1d |  | Project Manager | 6.8 | 5 | 6.8 |
| 14 | 14 | **Procurement & Permits** |  |  | 2023-09-04 | 2024-12-05 |  |  |  |  |  |  |  |  |  |  |  |
| 15 | 1.14 | Charger Equipment Procurement |  | 30d | 2024-03-28 A | 2024-05-09 |  | 84% | 4.8d | 2024-03-27 | 2024-04-30 | 24d | 0d | Project Manager | 9.34 | 8.49 | 8.22 |
| 16 | 1.15 | Switchgear & Cable Procurement |  | 22d | 2024-05-10 A | 2024-06-11 | 15 | 73% | 5.94d | 2024-05-10 | 2024-06-05 | 18d | 0d | Electrical Engineer | 8.59 | 7.81 | 7.12 |
| 17 | 1.16 | Highway Permit Application (S50/S171) |  | 25d | 2024-06-12 | 2024-07-17 | 16 |  |  | 2024-06-12 | 2024-07-08 | 18d | 0d | Permit Coordinator | 6.74 | 6.12 |  |
| 18 | 1.17 | DNO Connection Agreement |  | 33d | 2024-07-22 | 2024-09-05 | 17 |  |  | 2024-07-18 | 2024-08-21 | 24d | 0d | Electrical Engineer | 10.68 | 9.71 |  |
| 19 | 1.18 | Permits Secured Milestone | milestone | 0d | 2024-09-06 | 2024-09-06 | 18 |  |  | 2024-09-06 | 2024-09-06 | 1d | 0d | Permit Coordinator | 5.5 | 5 |  |
| 20 | 20 | **Construction & Installation** |  |  | 2023-09-04 | 2024-12-05 |  |  |  |  |  |  |  |  |  |  |  |
| 21 | 1.20 | Traffic Management Setup |  | 2d | 2024-09-06 | 2024-09-10 |  |  |  | 2024-09-06 | 2024-09-10 | 2d | 0d | Traffic Management Officer; Groundworks Crew | 5.5 | 5 |  |
| 22 | 1.21 | Excavation & Trenching |  | 7d | 2024-09-11 | 2024-09-20 | 21 |  |  | 2024-09-11 | 2024-09-19 | 6d | 0d | Groundworks Crew | 5.5 | 5 |  |
| 23 | 1.22 | Cable Ducting Installation |  | 4d | 2024-09-23 | 2024-09-27 | 22 |  |  | 2024-09-23 | 2024-09-27 | 4d | 0d | Groundworks Crew; Electrical Contractor | 5.5 | 5 |  |
| 24 | 1.23 | Foundation & Bollard Base |  | 4d | 2024-09-30 | 2024-10-04 | 23 |  |  | 2024-09-30 | 2024-10-03 | 3d | 0d | Groundworks Crew | 5.5 | 5 |  |
| 25 | 1.24 | Electrical Cabling & Termination |  | 7d | 2024-10-07 | 2024-10-16 | 24 |  |  | 2024-10-07 | 2024-10-15 | 6d | 0d | Electrical Contractor | 5.5 | 5 |  |
| 26 | 1.25 | Charger Unit Mounting |  | 2d | 2024-10-17 | 2024-10-21 | 25 |  |  | 2024-10-17 | 2024-10-21 | 2d | 0d | Electrical Contractor; Network Commissioning Tech | 5.5 | 5 |  |
| 27 | 1.26 | Reinstatement & Making Good |  | 4d | 2024-10-22 | 2024-10-28 | 26 |  |  | 2024-10-22 | 2024-10-25 | 3d | 0d | Groundworks Crew | 5.5 | 5 |  |
| 28 | 1.27 | Construction Complete Milestone | milestone | 0d | 2024-10-29 | 2024-10-29 | 27 |  |  | 2024-10-29 | 2024-10-29 | 1d | 0d | Project Manager | 5.5 | 5 |  |

Notes:
- 9: Design amendments required following review.
- 10: Design amendments required following review.
- 12: Design amendments required following review.
- 13: Design amendments required following review.

| ID | WBS | Task | Type | Duration | Start | Finish | Predecessors | Baseline start | Baseline finish | Baseline duration | Total slack | Resources | Cost | Baseline cost |
| --- | --- | --- | --- | --- | --- | --- | --- | --- | --- | --- | --- | --- | --- | --- |
| 29 | 29 | **Commissioning & Handover** |  |  | 2023-09-04 | 2024-12-05 |  |  |  |  |  |  |  |  |
| 30 | 1.29 | Electrical Testing & Certification |  | 3d | 2024-10-29 | 2024-11-01 |  | 2024-10-29 | 2024-11-01 | 3d | 0d | Electrical Contractor; QA Inspector | 5.5 | 5 |
| 31 | 1.30 | Network Connectivity & Software Config |  | 2d | 2024-11-04 | 2024-11-06 | 30 | 2024-11-04 | 2024-11-06 | 2d | 0d | Network Commissioning Tech | 5.5 | 5 |
| 32 | 1.31 | DNO Energisation |  | 8d | 2024-11-08 | 2024-11-20 | 31 | 2024-11-07 | 2024-11-15 | 6d | 0d | Electrical Engineer | 5.5 | 5 |
| 33 | 1.32 | User Acceptance Testing |  | 2d | 2024-11-21 | 2024-11-25 | 32 | 2024-11-21 | 2024-11-25 | 2d | 0d | Project Manager; QA Inspector | 5.5 | 5 |
| 34 | 1.33 | Health & Safety Sign-off |  | 1d | 2024-11-26 | 2024-11-27 | 33 | 2024-11-26 | 2024-11-27 | 1d | 0d |  | 5.5 | 5 |
| 35 | 1.34 | As-Built Documentation |  | 4d | 2024-11-28 | 2024-12-04 | 34 | 2024-11-28 | 2024-12-03 | 3d | 0d | Civil Engineer; Electrical Engineer | 5.5 | 5 |
| 36 | 1.35 | Project Handover Milestone | milestone | 0d | 2024-12-05 | 2024-12-05 | 35 | 2024-12-05 | 2024-12-05 | 1d | 0d | Project Manager | 5.5 | 5 |
