# Ealing - Green Lane - 6x 7kW AC Bollard Installation

Schedule from MS Project XML, 2023-10-25 to 2024-09-09, status date 2026-02-13, A marks actual dates.

## Resources

| Resource | Rate |
| --- | --- |
| Project Manager | 85 |
| Civil Engineer | 75 |
| Electrical Engineer | 78 |
| Site Surveyor | 55 |
| Permit Coordinator | 50 |
| Groundworks Crew | 45 |
| Electrical Contractor | 65 |
| Network Commissioning Tech | 60 |
| Traffic Management Officer | 48 |
| QA Inspector | 58 |

## Schedule

| ID | WBS | Task | Type | Duration | Start | Finish | Predecessors | Complete | Remaining | Baseline start | Baseline finish | Baseline duration | Total slack | Resources | Cost | Baseline cost | Actual cost |
| --- | --- | --- | --- | --- | --- | --- | --- | --- | --- | --- | --- | --- | --- | --- | --- | --- | --- |
| 2 | 2 | **Initiation & Planning** |  |  | 2023-10-25 | 2024-09-09 |  |  |  |  |  |  |  |  |  |  |  |
| 3 | 1.2 | Site Identification & Assessment |  | 6d | 2023-10-25 A | 2023-11-02 A |  | 100% |  | 2023-10-25 | 2023-11-02 | 6d |  | Project Manager; Site Surveyor | 5.07 | 5 | 5.07 |
| 4 | 1.3 | Feasibility Study |  | 10d | 2023-11-03 A | 2023-11-17 A | 3 | 100% |  | 2023-11-03 | 2023-11-17 | 10d |  | Civil Engineer; Site Surveyor | 5.07 | 5 | 5.07 |
| 5 | 1.4 | Stakeholder Consultation |  | 13d | 2023-11-20 A | 2023-12-07 A | 4 | 100% |  | 2023-11-20 | 2023-12-07 | 13d |  | Project Manager; Permit Coordinator | 6.64 | 6.54 | 6.64 |
| 6 | 1.5 | DNO Pre-Application |  | 6d | 2023-12-08 A | 2023-12-18 A | 5 | 100% |  | 2023-12-08 | 2023-12-18 | 6d |  | Electrical Engineer | 5.07 | 5 | 5.07 |
| 7 | 1.6 | Planning Approval Milestone | milestone | 0d | 2023-12-19 A | 2023-12-19 A | 6 | 100% |  | 2023-12-19 | 2023-12-19 | 1d |  | Project Manager | 5.07 | 5 | 5.07 |
| 8 | 8 | **Detailed Design** |  |  | 2023-10-25 | 2024-09-09 |  |  |  |  |  |  |  |  |  |  |  |
| 9 | 1.8 | Electrical Design & Load Calculations |  | 13d | 2023-12-19 A | 2024-01-05 A |  | 100% |  | 2023-12-19 | 2024-01-05 | 13d |  | Electrical Engineer | 5.35 | 5.27 | 5.35 |
| 10 | 1.9 | Civil & Structural Design |  | 10d | 2024-01-08 A | 2024-01-22 A | 9 | 100% |  | 2024-01-08 | 2024-01-22 | 10d |  | Civil Engineer | 5.07 | 5 | 5.07 |
| 11 | 1.10 | Traffic Management Plan |  | 6d | 2024-01-23 A | 2024-01-31 A | 10 | 100% |  | 2024-01-23 | 2024-01-31 | 6d |  | Traffic Management Officer | 5.07 | 5 | 5.07 |
| 12 | 1.11 | Design Review & Sign-off |  | 3d | 2024-02-01 A | 2024-02-06 A | 11 | 100% |  | 2024-02-01 | 2024-02-06 | 3d |  | Project Manager; Civil Engineer; Electrical Engineer | 5.07 | 5 | 5.07 |
| 13 | 1.12 | Design Complete Milestone | milestone | 0d | 2024-02-07 A | 2024-02-07 A | 12 | 100% |  | 2024-02-07 | 2024-02-07 | 1d |  | Project Manager | 5.07 | 5 | 5.07 |
| 14 | 14 | **Procurement & Permits** |  |  | 2023-10-25 | 2024-09-09 |  |  |  |  |  |  |  |  |  |  |  |
| 15 | 1.14 | Charger Equipment Procurement |  | 27d | 2024-02-07 A | 2024-03-15 A |  | 100% |  | 2024-02-07 | 2024-03-14 | 26d |  | Project Manager | 12.69 | 12.51 | 12.69 |
| 16 | 1.15 | Switchgear & Cable Procurement |  | 19d | 2024-03-18 A | 2024-04-12 A | 15 | 100% |  | 2024-03-18 | 2024-04-12 | 19d |  | Electrical Engineer | 7.99 | 7.87 | 7.99 |
| 17 | 1.16 | Highway Permit Application (S50/S171) |  | 19d | 2024-04-15 A | 2024-05-10 | 16 | 80% | 3.8d | 2024-04-15 | 2024-05-10 | 19d | 0d | Permit Coordinator | 6.07 | 5.98 | 4.66 |
| 18 | 1.17 | DNO Connection Agreement |  | 27d | 2024-05-13 A | 2024-06-19 | 17 | 52% | 12.96d | 2024-05-13 | 2024-06-18 | 26d | 0d | Electrical Engineer | 10.46 | 10.3 | 6.42 |
| 19 | 1.18 | Permits Secured Milestone | milestone | 0d | 2024-06-20 A | 2024-06-20 | 18 | 61% | 0.39d | 2024-06-20 | 2024-06-20 | 1d | 0d | Permit Coordinator | 5.07 | 5 | 2.85 |
| 20 | 20 | **Construction & Installation** |  |  | 2023-10-25 | 2024-09-09 |  |  |  |  |  |  |  |  |  |  |  |
| 21 | 1.20 | Traffic Management Setup |  | 2d | 2024-06-20 | 2024-06-24 |  |  |  | 2024-06-20 | 2024-06-24 | 2d | 0d | Traffic Management Officer; Groundworks Crew | 5.07 | 5 |  |
| 22 | 1.21 | Excavation & Trenching |  | 6d | 2024-06-25 | 2024-07-03 | 21 |  |  | 2024-06-25 | 2024-07-03 | 6d | 0d | Groundworks Crew | 5.07 | 5 |  |
| 23 | 1.22 | Cable Ducting Installation |  | 5d | 2024-07-04 | 2024-07-11 | 22 |  |  | 2024-07-04 | 2024-07-11 | 5d | 0d | Groundworks Crew; Electrical Contractor | 5.07 | 5 |  |
| 24 | 1.23 | Foundation & Bollard Base |  | 3d | 2024-07-12 | 2024-07-17 | 23 |  |  | 2024-07-12 | 2024-07-17 | 3d | 0d | Groundworks Crew | 5.07 | 5 |  |
| 25 | 1.24 | Electrical Cabling & Termination |  | 6d | 2024-07-18 | 2024-07-26 | 24 |  |  | 2024-07-18 | 2024-07-26 | 6d | 0d | Electrical Contractor | 5.07 | 5 |  |
| 26 | 1.25 | Charger Unit Mounting |  | 2d | 2024-07-29 | 2024-07-31 | 25 |  |  | 2024-07-29 | 2024-07-31 | 2d | 0d | Electrical Contractor; Network Commissioning Tech | 5.07 | 5 |  |
| 27 | 1.26 | Reinstatement & Making Good |  | 3d | 2024-08-01 | 2024-08-06 | 26 |  |  | 2024-08-01 | 2024-08-06 | 3d | 0d | Groundworks Crew | 5.07 | 5 |  |
| 28 | 1.27 | Construction Complete Milestone | milestone | 0d | 2024-08-07 | 2024-08-07 | 27 |  |  | 2024-08-07 | 2024-08-07 | 1d | 0d | Project Manager | 5.07 | 5 |  |

| ID | WBS | Task | Type | Duration | Start | Finish | Predecessors | Baseline start | Baseline finish | Baseline duration | Total slack | Resources | Cost | Baseline cost |
| --- | --- | --- | --- | --- | --- | --- | --- | --- | --- | --- | --- | --- | --- | --- |
| 29 | 29 | **Commissioning & Handover** |  |  | 2023-10-25 | 2024-09-09 |  |  |  |  |  |  |  |  |
| 30 | 1.29 | Electrical Testing & Certification |  | 3d | 2024-08-07 | 2024-08-12 |  | 2024-08-07 | 2024-08-12 | 3d | 0d | Electrical Contractor; QA Inspector | 5.07 | 5 |
| 31 | 1.30 | Network Connectivity & Software Config |  | 2d | 2024-08-13 | 2024-08-15 | 30 | 2024-08-13 | 2024-08-15 | 2d | 0d | Network Commissioning Tech | 5.07 | 5 |
| 32 | 1.31 | DNO Energisation |  | 6d | 2024-08-16 | 2024-08-26 | 31 | 2024-08-16 | 2024-08-26 | 6d | 0d | Electrical Engineer | 5.07 | 5 |
| 33 | 1.32 | User Acceptance Testing |  | 2d | 2024-08-27 | 2024-08-29 | 32 | 2024-08-27 | 2024-08-29 | 2d | 0d | Project Manager; QA Inspector | 5.07 | 5 |
| 34 | 1.33 | Health & Safety Sign-off |  | 1d | 2024-08-30 | 2024-09-02 | 33 | 2024-08-30 | 2024-09-02 | 1d | 0d |  | 5.07 | 5 |
| 35 | 1.34 | As-Built Documentation |  | 3d | 2024-09-03 | 2024-09-06 | 34 | 2024-09-03 | 2024-09-06 | 3d | 0d | Civil Engineer; Electrical Engineer | 5.07 | 5 |
| 36 | 1.35 | Project Handover Milestone | milestone | 0d | 2024-09-09 | 2024-09-09 | 35 | 2024-09-09 | 2024-09-09 | 1d | 0d | Project Manager | 5.07 | 5 |
