# Brent - Cedar Close - 9x 22kW AC Pedestal Installation

Schedule from MS Project XML, 2024-02-26 to 2025-03-06, status date 2024-02-26.

## Resources

| Resource | Rate |
| --- | --- |
| Project Manager | 85 |
| Civil Engineer | 75 |
| Electrical Engineer | 78 |
| Site Surveyor | 55 |
| Permit Coordinator | 50 |
| Groundworks Crew | 45 |
| Electrical Contractor | 65 |
| Network Commissioning Tech | 60 |
| Traffic Management Officer | 48 |
| QA Inspector | 58 |
| Health & Safety Officer | 52 |
| DNO Liaison | 70 |

## Schedule

| ID | WBS | Task | Type | Duration | Start | Finish | Predecessors | Total slack | Resources | Cost |
| --- | --- | --- | --- | --- | --- | --- | --- | --- | --- | --- |
| 2 | 2 | **Initiation & Planning** |  |  | 2024-02-26 | 2025-03-06 |  |  |  |  |
| 3 | 1.2 | Site Identification & Assessment |  | 7d | 2024-02-26 | 2024-03-06 |  | 0d | Project Manager; Site Surveyor | 13.74 |
| 4 | 1.3 | Feasibility Study |  | 12d | 2024-03-07 | 2024-03-25 | 3 | 0d | Civil Engineer; Site Surveyor | 18.88 |
| 5 | 1.4 | Stakeholder Consultation |  | 15d | 2024-03-26 | 2024-04-16 | 4 | 0d | Project Manager; Permit Coordinator | 32.34 |
| 6 | 1.5 | DNO Pre-Application |  | 7d | 2024-04-17 | 2024-04-26 | 5 | 0d | Electrical Engineer; DNO Liaison | 13.41 |
| 7 | 1.6 | Planning Approval Milestone | milestone | 0d | 2024-04-29 | 2024-04-29 | 6 | 0d | Project Manager | 5 |
| 8 | 8 | **Detailed Design** |  |  | 2024-02-26 | 2025-03-06 |  |  |  |  |
| 9 | 1.8 | Electrical Design & Load Calculations |  | 15d | 2024-04-29 | 2024-05-20 |  | 0d | Electrical Engineer | 29.96 |
| 10 | 1.9 | Civil & Structural Design |  | 12d | 2024-05-21 | 2024-06-06 | 9 | 0d | Civil Engineer | 19.52 |
| 11 | 1.10 | Traffic Management Plan |  | 7d | 2024-06-07 | 2024-06-18 | 10 | 0d | Traffic Management Officer | 12.3 |
| 12 | 1.11 | Design Review & Sign-off |  | 4d | 2024-06-19 | 2024-06-25 | 11 | 0d | Project Manager; Civil Engineer; Electrical Engineer | 9.82 |
| 13 | 1.12 | Design Complete Milestone | milestone | 0d | 2024-06-26 | 2024-06-26 | 12 | 0d | Project Manager | 5 |
| 14 | 14 | **Procurement & Permits** |  |  | 2024-02-26 | 2025-03-06 |  |  |  |  |
| 15 | 1.14 | Charger Equipment Procurement |  | 31d | 2024-06-26 | 2024-08-08 |  | 0d | Project Manager | 55.93 |
| 16 | 1.15 | Switchgear & Cable Procurement |  | 23d | 2024-08-09 | 2024-09-11 | 15 | 0d | Electrical Engineer | 52.92 |
| 17 | 1.16 | Highway Permit Application (S50/S171) |  | 23d | 2024-09-12 | 2024-10-15 | 16 | 0d | Permit Coordinator | 38.2 |
| 18 | 1.17 | DNO Connection Agreement |  | 31d | 2024-10-16 | 2024-11-28 | 17 | 0d | Electrical Engineer; DNO Liaison | 72.8 |
| 19 | 1.18 | Permits Secured Milestone | milestone | 0d | 2024-11-29 | 2024-11-29 | 18 | 0d | Permit Coordinator | 5 |
| 20 | 20 | **Construction & Installation** |  |  | 2024-02-26 | 2025-03-06 |  |  |  |  |
| 21 | 1.20 | Traffic Management Setup |  | 3d | 2024-11-29 | 2024-12-04 |  | 0d | Traffic Management Officer; Groundworks Crew | 5.7 |
| 22 | 1.21 | Excavation & Trenching |  | 7d | 2024-12-05 | 2024-12-16 | 21 | 0d | Groundworks Crew | 16.77 |
| 23 | 1.22 | Cable Ducting Installation |  | 6d | 2024-12-17 | 2024-12-25 | 22 | 0d | Groundworks Crew; Electrical Contractor | 10.69 |
| 24 | 1.23 | Foundation & Bollard Base |  | 4d | 2024-12-26 | 2025-01-01 | 23 | 0d | Groundworks Crew | 9.28 |
| 25 | 1.24 | Electrical Cabling & Termination |  | 7d | 2025-01-02 | 2025-01-13 | 24 | 0d | Electrical Contractor | 12.97 |
| 26 | 1.25 | Charger Unit Mounting |  | 3d | 2025-01-14 | 2025-01-17 | 25 | 0d | Electrical Contractor; Network Commissioning Tech | 5.41 |
| 27 | 1.26 | Reinstatement & Making Good |  | 4d | 2025-01-20 | 2025-01-24 | 26 | 0d | Groundworks Crew | 8.51 |
| 28 | 1.27 | Construction Complete Milestone | milestone | 0d | 2025-01-27 | 2025-01-27 | 27 | 0d | Project Manager | 5 |

| ID | WBS | Task | Type | Duration | Start | Finish | Predecessors | Total slack | Resources | Cost |
| --- | --- | --- | --- | --- | --- | --- | --- | --- | --- | --- |
| 29 | 29 | **Commissioning & Handover** |  |  | 2024-02-26 | 2025-03-06 |  |  |  |  |
| 30 | 1.29 | Electrical Testing & Certification |  | 4d | 2025-01-27 | 2025-01-31 |  | 0d | Electrical Contractor; QA Inspector | 5.87 |
| 31 | 1.30 | Network Connectivity & Software Config |  | 3d | 2025-02-03 | 2025-02-06 | 30 | 0d | Network Commissioning Tech | 5.07 |
| 32 | 1.31 | DNO Energisation |  | 7d | 2025-02-07 | 2025-02-18 | 31 | 0d | Electrical Engineer; DNO Liaison | 16.99 |
| 33 | 1.32 | User Acceptance Testing |  | 3d | 2025-02-19 | 2025-02-24 | 32 | 0d | Project Manager; QA Inspector | 6.14 |
| 34 | 1.33 | Health & Safety Sign-off |  | 1d | 2025-02-25 | 2025-02-26 | 33 | 0d | Health & Safety Officer | 5 |
| 35 | 1.34 | As-Built Documentation |  | 4d | 2025-02-27 | 2025-03-05 | 34 | 0d | Civil Engineer; Electrical Engineer | 7.57 |
| 36 | 1.35 | Project Handover Milestone | milestone | 0d | 2025-03-06 | 2025-03-06 | 35 | 0d | Project Manager | 5 |
