# Lewisham - Oak Drive - 6x 22kW AC Pedestal Installation

Schedule from MS Project XML, 2023-09-22 to 2024-08-05, status date 2026-02-13, A marks actual dates.

## Resources

| Resource | Rate |
| --- | --- |
| Project Manager | 85 |
| Civil Engineer | 75 |
| Electrical Engineer | 78 |
| Site Surveyor | 55 |
| Permit Coordinator | 50 |
| Groundworks Crew | 45 |
| Electrical Contractor | 65 |
| Network Commissioning Tech | 60 |
| Traffic Management Officer | 48 |
| QA Inspector | 58 |

## Schedule

| ID | WBS | Task | Type | Duration | Start | Finish | Predecessors | Complete | Remaining | Baseline start | Baseline finish | Baseline duration | Total slack | Resources | Cost | Baseline cost | Actual cost |
| --- | --- | --- | --- | --- | --- | --- | --- | --- | --- | --- | --- | --- | --- | --- | --- | --- | --- |
| 2 | 2 | **Initiation & Planning** |  |  | 2023-09-22 | 2024-08-05 |  |  |  |  |  |  |  |  |  |  |  |
| 3 | 1.2 | Site Identification & Assessment |  | 6d | 2023-09-22 A | 2023-10-02 A |  | 100% |  | 2023-09-22 | 2023-10-02 | 6d |  | Project Manager; Site Surveyor | 8.16 | 8.3 | 8.16 |
| 4 | 1.3 | Feasibility Study |  | 10d | 2023-10-03 A | 2023-10-17 A | 3 | 100% |  | 2023-10-03 | 2023-10-17 | 10d |  | Civil Engineer; Site Surveyor | 14.01 | 14.25 | 14.01 |
| 5 | 1.4 | Stakeholder Consultation |  | 13d | 2023-10-18 A | 2023-11-06 A | 4 | 100% |  | 2023-10-18 | 2023-11-06 | 13d |  | Project Manager; Permit Coordinator | 17.58 | 17.88 | 17.58 |
| 6 | 1.5 | DNO Pre-Application |  | 6d | 2023-11-07 A | 2023-11-15 A | 5 | 100% |  | 2023-11-07 | 2023-11-15 | 6d |  | Electrical Engineer | 6.94 | 7.06 | 6.94 |
| 7 | 1.6 | Planning Approval Milestone | milestone | 0d | 2023-11-16 A | 2023-11-16 A | 6 | 100% |  | 2023-11-16 | 2023-11-16 | 1d |  | Project Manager | 4.92 | 5 | 4.92 |
| 8 | 8 | **Detailed Design** |  |  | 2023-09-22 | 2024-08-05 |  |  |  |  |  |  |  |  |  |  |  |
| 9 | 1.8 | Electrical Design & Load Calculations |  | 13d | 2023-11-16 A | 2023-12-05 A |  | 100% |  | 2023-11-16 | 2023-12-05 | 13d |  | Electrical Engineer | 13.07 | 13.29 | 13.07 |
| 10 | 1.9 | Civil & Structural Design |  | 10d | 2023-12-06 A | 2023-12-20 A | 9 | 100% |  | 2023-12-06 | 2023-12-20 | 10d |  | Civil Engineer | 14.56 | 14.81 | 14.56 |
| 11 | 1.10 | Traffic Management Plan |  | 6d | 2023-12-21 A | 2023-12-29 A | 10 | 100% |  | 2023-12-21 | 2023-12-29 | 6d |  | Traffic Management Officer | 5.8 | 5.9 | 5.8 |
| 12 | 1.11 | Design Review & Sign-off |  | 3d | 2024-01-01 A | 2024-01-04 A | 11 | 100% |  | 2024-01-01 | 2024-01-04 | 3d |  | Project Manager; Civil Engineer; Electrical Engineer | 4.92 | 5 | 4.92 |
| 13 | 1.12 | Design Complete Milestone | milestone | 0d | 2024-01-05 A | 2024-01-05 A | 12 | 100% |  | 2024-01-05 | 2024-01-05 | 1d |  | Project Manager | 4.92 | 5 | 4.92 |
| 14 | 14 | **Procurement & Permits** |  |  | 2023-09-22 | 2024-08-05 |  |  |  |  |  |  |  |  |  |  |  |
| 15 | 1.14 | Charger Equipment Procurement |  | 26d | 2024-01-05 A | 2024-02-12 A |  | 100% |  | 2024-01-05 | 2024-02-12 | 26d |  | Project Manager | 26.31 | 26.76 | 26.31 |
| 16 | 1.15 | Switchgear & Cable Procurement |  | 19d | 2024-02-13 A | 2024-03-11 A | 15 | 100% |  | 2024-02-13 | 2024-03-11 | 19d |  | Electrical Engineer | 26.25 | 26.7 | 26.25 |
| 17 | 1.16 | Highway Permit Application (S50/S171) |  | 19d | 2024-03-12 A | 2024-04-08 A | 16 | 100% |  | 2024-03-12 | 2024-04-08 | 19d |  | Permit Coordinator | 18.49 | 18.81 | 18.49 |
| 18 | 1.17 | DNO Connection Agreement |  | 26d | 2024-04-09 A | 2024-05-15 A | 17 | 100% |  | 2024-04-09 | 2024-05-15 | 26d |  | Electrical Engineer | 31.57 | 32.11 | 31.57 |
| 19 | 1.18 | Permits Secured Milestone | milestone | 0d | 2024-05-16 A | 2024-05-16 A | 18 | 100% |  | 2024-05-16 | 2024-05-16 | 1d |  | Permit Coordinator | 4.92 | 5 | 4.92 |
| 20 | 20 | **Construction & Installation** |  |  | 2023-09-22 | 2024-08-05 |  |  |  |  |  |  |  |  |  |  |  |
| 21 | 1.20 | Traffic Management Setup |  | 2d | 2024-05-16 A | 2024-05-20 |  | 75% | 0.5d | 2024-05-16 | 2024-05-20 | 2d | 0d | Traffic Management Officer; Groundworks Crew | 4.92 | 5 | 4.25 |
| 22 | 1.21 | Excavation & Trenching |  | 6d | 2024-05-21 A | 2024-05-29 | 21 | 60% | 2.4d | 2024-05-21 | 2024-05-29 | 6d | 0d | Groundworks Crew | 7.52 | 7.65 | 4.79 |
| 23 | 1.22 | Cable Ducting Installation |  | 5d | 2024-05-30 | 2024-06-06 | 22 |  |  | 2024-05-30 | 2024-06-06 | 5d | 0d | Groundworks Crew; Electrical Contractor | 4.92 | 5 |  |
| 24 | 1.23 | Foundation & Bollard Base |  | 3d | 2024-06-07 | 2024-06-12 | 23 |  |  | 2024-06-07 | 2024-06-12 | 3d | 0d | Groundworks Crew | 4.92 | 5 |  |
| 25 | 1.24 | Electrical Cabling & Termination |  | 6d | 2024-06-13 | 2024-06-21 | 24 |  |  | 2024-06-13 | 2024-06-21 | 6d | 0d | Electrical Contractor | 8.29 | 8.43 |  |
| 26 | 1.25 | Charger Unit Mounting |  | 2d | 2024-06-24 | 2024-06-26 | 25 |  |  | 2024-06-24 | 2024-06-26 | 2d | 0d | Electrical Contractor; Network Commissioning Tech | 4.92 | 5 |  |
| 27 | 1.26 | Reinstatement & Making Good |  | 3d | 2024-06-27 | 2024-07-02 | 26 |  |  | 2024-06-27 | 2024-07-02 | 3d | 0d | Groundworks Crew | 4.92 | 5 |  |
| 28 | 1.27 | Construction Complete Milestone | milestone | 0d | 2024-07-03 | 2024-07-03 | 27 |  |  | 2024-07-03 | 2024-07-03 | 1d | 0d | Project Manager | 4.92 | 5 |  |

| ID | WBS | Task | Type | Duration | Start | Finish | Predecessors | Baseline start | Baseline finish | Baseline duration | Total slack | Resources | Cost | Baseline cost |
| --- | --- | --- | --- | --- | --- | --- | --- | --- | --- | --- | --- | --- | --- | --- |
| 29 | 29 | **Commissioning & Handover** |  |  | 2023-09-22 | 2024-08-05 |  |  |  |  |  |  |  |  |
| 30 | 1.29 | Electrical Testing & Certification |  | 3d | 2024-07-03 | 2024-07-08 |  | 2024-07-03 | 2024-07-08 | 3d | 0d | Electrical Contractor; QA Inspector | 4.92 | 5 |
| 31 | 1.30 | Network Connectivity & Software Config |  | 2d | 2024-07-09 | 2024-07-11 | 30 | 2024-07-09 | 2024-07-11 | 2d | 0d | Network Commissioning Tech | 4.92 | 5 |
| 32 | 1.31 | DNO Energisation |  | 6d | 2024-07-12 | 2024-07-22 | 31 | 2024-07-12 | 2024-07-22 | 6d | 0d | Electrical Engineer | 9.09 | 9.24 |
| 33 | 1.32 | User Acceptance Testing |  | 2d | 2024-07-23 | 2024-07-25 | 32 | 2024-07-23 | 2024-07-25 | 2d | 0d | Project Manager; QA Inspector | 4.92 | 5 |
| 34 | 1.33 | Health & Safety Sign-off |  | 1d | 2024-07-26 | 2024-07-29 | 33 | 2024-07-26 | 2024-07-29 | 1d | 0d |  | 4.92 | 5 |
| 35 | 1.34 | As-Built Documentation |  | 3d | 2024-07-30 | 2024-08-02 | 34 | 2024-07-30 | 2024-08-02 | 3d | 0d | Civil Engineer; Electrical Engineer | 4.92 | 5 |
| 36 | 1.35 | Project Handover Milestone | milestone | 0d | 2024-08-05 | 2024-08-05 | 35 | 2024-08-05 | 2024-08-05 | 1d | 0d | Project Manager | 4.92 | 5 |
