# Greenwich - High Street - 12x 50kW DC Rapid Installation

Schedule from MS Project XML, 2023-07-20 to 2025-10-14, status date 2026-02-13, A marks actual dates.

## Resources

| Resource | Rate |
| --- | --- |
| Project Manager | 85 |
| Civil Engineer | 75 |
| Electrical Engineer | 78 |
| Site Surveyor | 55 |
| Permit Coordinator | 50 |
| Groundworks Crew | 45 |
| Electrical Contractor | 65 |
| Network Commissioning Tech | 60 |
| Traffic Management Officer | 48 |
| QA Inspector | 58 |
| Health & Safety Officer | 52 |
| DNO Liaison | 70 |

## Schedule

| ID | WBS | Task | Type | Duration | Start | Finish | Predecessors | Complete | Remaining | Baseline start | Baseline finish | Baseline duration | Total slack | Resources | Cost | Baseline cost | Actual cost |
| --- | --- | --- | --- | --- | --- | --- | --- | --- | --- | --- | --- | --- | --- | --- | --- | --- | --- |
| 2 | 2 | **Initiation & Planning** |  |  | 2023-07-20 | 2025-10-14 |  |  |  |  |  |  |  |  |  |  |  |
| 3 | 1.2 | Site Identification & Assessment |  | 13d | 2023-07-24 A | 2023-08-10 A |  | 100% |  | 2023-07-20 | 2023-08-02 | 9d |  | Project Manager; Site Surveyor | 50.5 | 36.61 | 50.5 |
| 4 | 1.3 | Feasibility Study |  | 27d | 2023-08-14 A | 2023-09-20 A | 3 | 100% |  | 2023-08-11 | 2023-08-31 | 14d |  | Civil Engineer; Site Surveyor | 143.77 | 104.22 | 143.77 |
| 5 | 1.4 | Stakeholder Consultation |  | 32d | 2023-09-27 A | 2023-11-10 A | 4 | 100% |  | 2023-09-21 | 2023-10-17 | 18d |  | Project Manager; Permit Coordinator | 101.03 | 73.24 | 101.03 |
| 6 | 1.5 | DNO Pre-Application |  | 33d | 2023-11-24 A | 2024-01-10 A | 5 | 100% |  | 2023-11-13 | 2023-11-24 | 9d |  | Electrical Engineer; DNO Liaison | 78.07 | 54.43 | 78.07 |
| 7 | 1.6 | Planning Approval Milestone | milestone | 0d | 2024-01-11 A | 2024-01-11 A | 6 | 100% |  | 2024-01-11 | 2024-01-11 | 1d |  | Project Manager | 8.25 | 5.98 | 8.25 |
| 8 | 8 | **Detailed Design** |  |  | 2023-07-20 | 2025-10-14 |  |  |  |  |  |  |  |  |  |  |  |
| 9 | 1.8 | Electrical Design & Load Calculations |  | 45d | 2024-01-17 A | 2024-03-20 A |  | 100% |  | 2024-01-11 | 2024-02-06 | 18d |  | Electrical Engineer | 179.51 | 104.19 | 179.51 |
| 10 | 1.9 | Civil & Structural Design |  | 33d | 2024-03-25 A | 2024-05-09 A | 9 | 100% |  | 2024-03-21 | 2024-04-10 | 14d |  | Civil Engineer | 107.73 | 67.63 | 107.73 |
| 11 | 1.10 | Traffic Management Plan |  | 12d | 2024-05-10 A | 2024-05-28 A | 10 | 100% |  | 2024-05-10 | 2024-05-23 | 9d |  | Traffic Management Officer | 67.7 | 49.08 | 67.7 |
| 12 | 1.11 | Design Review & Sign-off |  | 18d | 2024-06-03 A | 2024-06-27 A | 11 | 100% |  | 2024-05-29 | 2024-06-05 | 5d |  | Project Manager; Civil Engineer; Electrical Engineer | 50.9 | 33.31 | 50.9 |
| 13 | 1.12 | Design Complete Milestone | milestone | 0d | 2024-07-01 A | 2024-07-01 A | 12 | 100% |  | 2024-06-28 | 2024-06-28 | 1d |  | Project Manager | 8.54 | 5.22 | 8.54 |
| 14 | 14 | **Procurement & Permits** |  |  | 2023-07-20 | 2025-10-14 |  |  |  |  |  |  |  |  |  |  |  |
| 15 | 1.14 | Charger Equipment Procurement |  | 59d | 2024-07-02 A | 2024-09-23 |  | 62% | 22.42d | 2024-06-28 | 2024-08-19 | 36d | 0d | Project Manager | 201.86 | 146.33 | 117.81 |
| 16 | 1.15 | Switchgear & Cable Procurement |  | 41d | 2024-09-26 A | 2024-11-22 | 15 | 65% | 14.35d | 2024-09-24 | 2024-10-31 | 27d | 0d | Electrical Engineer | 149.24 | 108.19 | 94.49 |
| 17 | 1.16 | Highway Permit Application (S50/S171) |  | 32d | 2024-11-25 | 2025-01-08 | 16 |  |  | 2024-11-25 | 2025-01-01 | 27d | 0d | Permit Coordinator | 275.45 | 199.68 |  |
| 18 | 1.17 | DNO Connection Agreement |  | 67d | 2025-01-16 | 2025-04-21 | 17 |  |  | 2025-01-09 | 2025-02-28 | 36d | 0d | Electrical Engineer; DNO Liaison | 321.67 | 228.46 |  |
| 19 | 1.18 | Permits Secured Milestone | milestone | 0d | 2025-04-22 | 2025-04-22 | 18 |  |  | 2025-04-22 | 2025-04-22 | 1d | 0d | Permit Coordinator | 6.9 | 5 |  |
| 20 | 20 | **Construction & Installation** |  |  | 2023-07-20 | 2025-10-14 |  |  |  |  |  |  |  |  |  |  |  |
| 21 | 1.20 | Traffic Management Setup |  | 5d | 2025-04-23 | 2025-04-30 |  |  |  | 2025-04-22 | 2025-04-25 | 3d | 0d | Traffic Management Officer; Groundworks Crew | 24.34 | 17.64 |  |
| 22 | 1.21 | Excavation & Trenching |  | 11d | 2025-05-01 | 2025-05-16 | 21 |  |  | 2025-05-01 | 2025-05-14 | 9d | 0d | Groundworks Crew | 72.82 | 52.79 |  |
| 23 | 1.22 | Cable Ducting Installation |  | 9d | 2025-05-20 | 2025-06-02 | 22 |  |  | 2025-05-19 | 2025-05-28 | 7d | 0d | Groundworks Crew; Electrical Contractor | 55.55 | 40.27 |  |
| 24 | 1.23 | Foundation & Bollard Base |  | 6d | 2025-06-03 | 2025-06-11 | 23 |  |  | 2025-06-03 | 2025-06-10 | 5d | 0d | Groundworks Crew | 30.85 | 22.37 |  |
| 25 | 1.24 | Electrical Cabling & Termination |  | 17d | 2025-06-13 | 2025-07-08 | 24 |  |  | 2025-06-12 | 2025-06-25 | 9d | 0d | Electrical Contractor | 88.43 | 64.1 |  |
| 26 | 1.25 | Charger Unit Mounting |  | 3d | 2025-07-09 | 2025-07-14 | 25 |  |  | 2025-07-09 | 2025-07-14 | 3d | 0d | Electrical Contractor; Network Commissioning Tech | 29.07 | 21.08 |  |
| 27 | 1.26 | Reinstatement & Making Good |  | 8d | 2025-07-16 | 2025-07-28 | 26 |  |  | 2025-07-15 | 2025-07-22 | 5d | 0d | Groundworks Crew | 43.01 | 31.18 |  |
| 28 | 1.27 | Construction Complete Milestone | milestone | 0d | 2025-07-29 | 2025-07-29 | 27 |  |  | 2025-07-29 | 2025-07-29 | 1d | 0d | Project Manager | 6.9 | 5 |  |

Notes:
- 6: Design amendments required following review. DNO connection timeline extended beyond estimate.
- 9: Design amendments required following review. DNO connection timeline extended beyond estimate.
- 10: Design amendments required following review. DNO connection timeline extended beyond estimate.
- 12: Design amendments required following review. DNO connection timeline extended beyond estimate.
- 13: Design amendments required following review. DNO connection timeline extended beyond estimate.

| ID | WBS | Task | Type | Duration | Start | Finish | Predecessors | Baseline start | Baseline finish | Baseline duration | Total slack | Resources | Cost | Baseline cost |
| --- | --- | --- | --- | --- | --- | --- | --- | --- | --- | --- | --- | --- | --- | --- |
| 29 | 29 | **Commissioning & Handover** |  |  | 2023-07-20 | 2025-10-14 |  |  |  |  |  |  |  |  |
| 30 | 1.29 | Electrical Testing & Certification |  | 7d | 2025-07-30 | 2025-08-08 |  | 2025-07-29 | 2025-08-05 | 5d | 0d | Electrical Contractor; QA Inspector | 32.52 | 23.58 |
| 31 | 1.30 | Network Connectivity & Software Config |  | 3d | 2025-08-11 | 2025-08-14 | 30 | 2025-08-11 | 2025-08-14 | 3d | 0d | Network Commissioning Tech | 24.07 | 17.45 |
| 32 | 1.31 | DNO Energisation |  | 25d | 2025-08-18 | 2025-09-22 | 31 | 2025-08-15 | 2025-08-28 | 9d | 0d | Electrical Engineer; DNO Liaison | 65.44 | 44.51 |
| 33 | 1.32 | User Acceptance Testing |  | 3d | 2025-09-23 | 2025-09-26 | 32 | 2025-09-23 | 2025-09-26 | 3d | 0d | Project Manager; QA Inspector | 26.16 | 18.97 |
| 34 | 1.33 | Health & Safety Sign-off |  | 1d | 2025-09-29 | 2025-09-30 | 33 | 2025-09-29 | 2025-09-30 | 1d | 0d | Health & Safety Officer | 10.35 | 7.5 |
| 35 | 1.34 | As-Built Documentation |  | 8d | 2025-10-01 | 2025-10-13 | 34 | 2025-10-01 | 2025-10-08 | 5d | 0d | Civil Engineer; Electrical Engineer | 45.27 | 32.81 |
| 36 | 1.35 | Project Handover Milestone | milestone | 0d | 2025-10-14 | 2025-10-14 | 35 | 2025-10-14 | 2025-10-14 | 1d | 0d | Project Manager | 7.01 | 5.08 |
