# Newham - Green Lane - 3x 150kW DC Ultra-Rapid Installation

Schedule from MS Project XML, 2023-02-01 to 2023-10-30, status date 2023-10-30, A marks actual dates.

## Resources

| Resource | Rate |
| --- | --- |
| Project Manager | 85 |
| Civil Engineer | 75 |
| Electrical Engineer | 78 |
| Site Surveyor | 55 |
| Permit Coordinator | 50 |
| Groundworks Crew | 45 |
| Electrical Contractor | 65 |
| Network Commissioning Tech | 60 |

## Schedule

| ID | WBS | Task | Type | Duration | Start | Finish | Predecessors | Complete | Baseline start | Baseline finish | Baseline duration | Resources | Cost | Baseline cost | Actual cost |
| --- | --- | --- | --- | --- | --- | --- | --- | --- | --- | --- | --- | --- | --- | --- | --- |
| 2 | 2 | **Initiation & Planning** |  |  | 2023-02-01 | 2023-10-30 |  |  |  |  |  |  |  |  |  |
| 3 | 1.2 | Site Identification & Assessment |  | 5d | 2023-02-01 A | 2023-02-08 A |  | 100% | 2023-02-01 | 2023-02-08 | 5d | Project Manager; Site Surveyor | 15.81 | 15.54 | 15.81 |
| 4 | 1.3 | Feasibility Study |  | 8d | 2023-02-09 A | 2023-02-21 A | 3 | 100% | 2023-02-09 | 2023-02-21 | 8d | Civil Engineer; Site Surveyor | 41.63 | 40.91 | 41.63 |
| 5 | 1.4 | Stakeholder Consultation |  | 10d | 2023-02-22 A | 2023-03-08 A | 4 | 100% | 2023-02-22 | 2023-03-08 | 10d | Project Manager; Permit Coordinator | 38.11 | 37.45 | 38.11 |
| 6 | 1.5 | DNO Pre-Application |  | 5d | 2023-03-09 A | 2023-03-16 A | 5 | 100% | 2023-03-09 | 2023-03-16 | 5d | Electrical Engineer | 22.66 | 22.27 | 22.66 |
| 7 | 1.6 | Planning Approval Milestone | milestone | 0d | 2023-03-17 A | 2023-03-17 A | 6 | 100% | 2023-03-17 | 2023-03-17 | 1d | Project Manager | 5.14 | 5.06 | 5.14 |
| 8 | 8 | **Detailed Design** |  |  | 2023-02-01 | 2023-10-30 |  |  |  |  |  |  |  |  |  |
| 9 | 1.8 | Electrical Design & Load Calculations |  | 10d | 2023-03-17 A | 2023-03-31 A |  | 100% | 2023-03-17 | 2023-03-31 | 10d | Electrical Engineer | 53.71 | 52.79 | 53.71 |
| 10 | 1.9 | Civil & Structural Design |  | 8d | 2023-04-03 A | 2023-04-13 A | 9 | 100% | 2023-04-03 | 2023-04-13 | 8d | Civil Engineer | 40.69 | 39.99 | 40.69 |
| 11 | 1.10 | Traffic Management Plan |  | 5d | 2023-04-14 A | 2023-04-21 A | 10 | 100% | 2023-04-14 | 2023-04-21 | 5d |  | 16.94 | 16.64 | 16.94 |
| 12 | 1.11 | Design Review & Sign-off |  | 3d | 2023-04-24 A | 2023-04-27 A | 11 | 100% | 2023-04-24 | 2023-04-27 | 3d | Project Manager; Civil Engineer; Electrical Engineer | 12.99 | 12.77 | 12.99 |
| 13 | 1.12 | Design Complete Milestone | milestone | 0d | 2023-04-28 A | 2023-04-28 A | 12 | 100% | 2023-04-28 | 2023-04-28 | 1d | Project Manager | 5.09 | 5 | 5.09 |
| 14 | 14 | **Procurement & Permits** |  |  | 2023-02-01 | 2023-10-30 |  |  |  |  |  |  |  |  |  |
| 15 | 1.14 | Charger Equipment Procurement |  | 21d | 2023-04-28 A | 2023-05-29 A |  | 100% | 2023-04-28 | 2023-05-29 | 21d | Project Manager | 114.8 | 112.83 | 114.8 |
| 16 | 1.15 | Switchgear & Cable Procurement |  | 16d | 2023-05-30 A | 2023-06-21 A | 15 | 100% | 2023-05-30 | 2023-06-21 | 16d | Electrical Engineer | 56.41 | 55.44 | 56.41 |
| 17 | 1.16 | Highway Permit Application (S50/S171) |  | 16d | 2023-06-22 A | 2023-07-14 A | 16 | 100% | 2023-06-22 | 2023-07-14 | 16d | Permit Coordinator | 62.55 | 61.47 | 62.55 |
| 18 | 1.17 | DNO Connection Agreement |  | 21d | 2023-07-17 A | 2023-08-15 A | 17 | 100% | 2023-07-17 | 2023-08-15 | 21d | Electrical Engineer | 71.21 | 69.98 | 71.21 |
| 19 | 1.18 | Permits Secured Milestone | milestone | 0d | 2023-08-16 A | 2023-08-16 A | 18 | 100% | 2023-08-16 | 2023-08-16 | 1d | Permit Coordinator | 5.09 | 5 | 5.09 |
| 20 | 20 | **Construction & Installation** |  |  | 2023-02-01 | 2023-10-30 |  |  |  |  |  |  |  |  |  |
| 21 | 1.20 | Traffic Management Setup |  | 2d | 2023-08-16 A | 2023-08-18 A |  | 100% | 2023-08-16 | 2023-08-18 | 2d | Groundworks Crew | 7.21 | 7.09 | 7.21 |
| 22 | 1.21 | Excavation & Trenching |  | 5d | 2023-08-21 A | 2023-08-28 A | 21 | 100% | 2023-08-21 | 2023-08-28 | 5d | Groundworks Crew | 16 | 15.72 | 16 |
| 23 | 1.22 | Cable Ducting Installation |  | 4d | 2023-08-29 A | 2023-09-04 A | 22 | 100% | 2023-08-29 | 2023-09-04 | 4d | Groundworks Crew; Electrical Contractor | 21.05 | 20.69 | 21.05 |
| 24 | 1.23 | Foundation & Bollard Base |  | 3d | 2023-09-05 A | 2023-09-08 A | 23 | 100% | 2023-09-05 | 2023-09-08 | 3d | Groundworks Crew | 15.79 | 15.52 | 15.79 |
| 25 | 1.24 | Electrical Cabling & Termination |  | 5d | 2023-09-11 A | 2023-09-18 A | 24 | 100% | 2023-09-11 | 2023-09-18 | 5d | Electrical Contractor | 17.23 | 16.93 | 17.23 |
| 26 | 1.25 | Charger Unit Mounting |  | 2d | 2023-09-19 A | 2023-09-21 A | 25 | 100% | 2023-09-19 | 2023-09-21 | 2d | Electrical Contractor; Network Commissioning Tech | 8.31 | 8.17 | 8.31 |
| 27 | 1.26 | Reinstatement & Making Good |  | 3d | 2023-09-22 A | 2023-09-27 A | 26 | 100% | 2023-09-22 | 2023-09-27 | 3d | Groundworks Crew | 10.37 | 10.19 | 10.37 |
| 28 | 1.27 | Construction Complete Milestone | milestone | 0d | 2023-09-28 A | 2023-09-28 A | 27 | 100% | 2023-09-28 | 2023-09-28 | 1d | Project Manager | 5.09 | 5 | 5.09 |

| ID | WBS | Task | Type | Duration | Start | Finish | Predecessors | Complete | Baseline start | Baseline finish | Baseline duration | Resources | Cost | Baseline cost | Actual cost |
| --- | --- | --- | --- | --- | --- | --- | --- | --- | --- | --- | --- | --- | --- | --- | --- |
| 29 | 29 | **Commissioning & Handover** |  |  | 2023-02-01 | 2023-10-30 |  |  |  |  |  |  |  |  |  |
| 30 | 1.29 | Electrical Testing & Certification |  | 3d | 2023-09-28 A | 2023-10-03 A |  | 100% | 2023-09-28 | 2023-10-03 | 3d | Electrical Contractor | 12.14 | 11.93 | 12.14 |
| 31 | 1.30 | Network Connectivity & Software Config |  | 2d | 2023-10-04 A | 2023-10-06 A | 30 | 100% | 2023-10-04 | 2023-10-06 | 2d | Network Commissioning Tech | 11.03 | 10.84 | 11.03 |
| 32 | 1.31 | DNO Energisation |  | 5d | 2023-10-09 A | 2023-10-16 A | 31 | 100% | 2023-10-09 | 2023-10-16 | 5d | Electrical Engineer | 21.37 | 21 | 21.37 |
| 33 | 1.32 | User Acceptance Testing |  | 2d | 2023-10-17 A | 2023-10-19 A | 32 | 100% | 2023-10-17 | 2023-10-19 | 2d | Project Manager | 6.76 | 6.64 | 6.76 |
| 34 | 1.33 | Health & Safety Sign-off |  | 1d | 2023-10-20 A | 2023-10-23 A | 33 | 100% | 2023-10-20 | 2023-10-23 | 1d |  | 5.09 | 5 | 5.09 |
| 35 | 1.34 | As-Built Documentation |  | 3d | 2023-10-24 A | 2023-10-27 A | 34 | 100% | 2023-10-24 | 2023-10-27 | 3d | Civil Engineer; Electrical Engineer | 9.45 | 9.29 | 9.45 |
| 36 | 1.35 | Project Handover Milestone | milestone | 0d | 2023-10-30 A | 2023-10-30 A | 35 | 100% | 2023-10-30 | 2023-10-30 | 1d | Project Manager | 5.46 | 5.36 | 5.46 |
