# Merton - Queen's Road - 10x 7kW AC Bollard Installation

Schedule from MS Project XML, 2023-08-15 to 2025-11-13, status date 2026-02-13, A marks actual dates.

## Resources

| Resource | Rate |
| --- | --- |
| Project Manager | 85 |
| Civil Engineer | 75 |
| Electrical Engineer | 78 |
| Site Surveyor | 55 |
| Permit Coordinator | 50 |
| Groundworks Crew | 45 |
| Electrical Contractor | 65 |
| Network Commissioning Tech | 60 |
| Traffic Management Officer | 48 |
| QA Inspector | 58 |
| Health & Safety Officer | 52 |
| DNO Liaison | 70 |

## Schedule

| ID | WBS | Task | Type | Duration | Start | Finish | Predecessors | Complete | Remaining | Baseline start | Baseline finish | Baseline duration | Total slack | Resources | Cost | Baseline cost | Actual cost |
| --- | --- | --- | --- | --- | --- | --- | --- | --- | --- | --- | --- | --- | --- | --- | --- | --- | --- |
| 2 | 2 | **Initiation & Planning** |  |  | 2023-08-15 | 2025-11-13 |  |  |  |  |  |  |  |  |  |  |  |
| 3 | 1.2 | Site Identification & Assessment |  | 11d | 2023-08-15 A | 2023-08-30 A |  | 100% |  | 2023-08-15 | 2023-08-25 | 8d |  | Project Manager; Site Surveyor | 9.1 | 5.18 | 9.1 |
| 4 | 1.3 | Feasibility Study |  | 17d | 2023-09-04 A | 2023-09-27 A | 3 | 100% |  | 2023-08-31 | 2023-09-19 | 13d |  | Civil Engineer; Site Surveyor | 15.66 | 8.38 | 15.66 |
| 5 | 1.4 | Stakeholder Consultation |  | 23d | 2023-09-29 A | 2023-11-01 A | 4 | 100% |  | 2023-09-28 | 2023-10-20 | 16d |  | Project Manager; Permit Coordinator | 23.62 | 11.75 | 23.62 |
| 6 | 1.5 | DNO Pre-Application |  | 13d | 2023-11-06 A | 2023-11-23 A | 5 | 100% |  | 2023-11-02 | 2023-11-14 | 8d |  | Electrical Engineer; DNO Liaison | 11.94 | 6.42 | 11.94 |
| 7 | 1.6 | Planning Approval Milestone | milestone | 0d | 2023-11-24 A | 2023-11-24 A | 6 | 100% |  | 2023-11-24 | 2023-11-24 | 1d |  | Project Manager | 8.91 | 5 | 8.91 |
| 8 | 8 | **Detailed Design** |  |  | 2023-08-15 | 2025-11-13 |  |  |  |  |  |  |  |  |  |  |  |
| 9 | 1.8 | Electrical Design & Load Calculations |  | 37d | 2023-11-24 A | 2024-01-16 A |  | 100% |  | 2023-11-24 | 2023-12-18 | 16d |  | Electrical Engineer | 26.74 | 12.56 | 26.74 |
| 10 | 1.9 | Civil & Structural Design |  | 21d | 2024-01-19 A | 2024-02-19 | 9 | 67% | 6.93d | 2024-01-17 | 2024-02-05 | 13d | 0d | Civil Engineer | 12.5 | 6.11 | 7.72 |
| 11 | 1.10 | Traffic Management Plan |  | 10d | 2024-02-20 A | 2024-03-05 | 10 | 53% | 4.7d | 2024-02-20 | 2024-03-01 | 8d | 0d | Traffic Management Officer | 10.46 | 5.61 | 5.71 |
| 12 | 1.11 | Design Review & Sign-off |  | 5d | 2024-03-06 A | 2024-03-13 | 11 | 29% | 3.55d | 2024-03-06 | 2024-03-12 | 4d | 0d | Project Manager; Civil Engineer; Electrical Engineer | 9.74 | 5 | 3.03 |
| 13 | 1.12 | Design Complete Milestone | milestone | 0d | 2024-03-14 | 2024-03-14 | 12 |  |  | 2024-03-14 | 2024-03-14 | 1d | 0d | Project Manager | 9.53 | 5 |  |
| 14 | 14 | **Procurement & Permits** |  |  | 2023-08-15 | 2025-11-13 |  |  |  |  |  |  |  |  |  |  |  |
| 15 | 1.14 | Charger Equipment Procurement |  | 81d | 2024-03-22 | 2024-07-15 |  |  |  | 2024-03-14 | 2024-04-29 | 32d | 0d | Project Manager | 67.38 | 24.78 |  |
| 16 | 1.15 | Switchgear & Cable Procurement |  | 71d | 2024-07-18 | 2024-10-25 | 15 |  |  | 2024-07-16 | 2024-08-19 | 24d | 0d | Electrical Engineer | 50.4 | 20.95 |  |
| 17 | 1.16 | Highway Permit Application (S50/S171) |  | 71d | 2024-11-12 | 2025-02-19 | 16 |  |  | 2024-10-28 | 2024-11-29 | 24d | 0d | Permit Coordinator | 34.6 | 19.73 |  |
| 18 | 1.17 | DNO Connection Agreement |  | 54d | 2025-03-03 | 2025-05-16 | 17 |  |  | 2025-02-20 | 2025-04-07 | 32d | 0d | Electrical Engineer; DNO Liaison | 48.17 | 26.23 |  |
| 19 | 1.18 | Permits Secured Milestone | milestone | 0d | 2025-05-21 | 2025-05-21 | 18 |  |  | 2025-05-19 | 2025-05-19 | 1d | 0d | Permit Coordinator | 10.48 | 5 |  |
| 20 | 20 | **Construction & Installation** |  |  | 2023-08-15 | 2025-11-13 |  |  |  |  |  |  |  |  |  |  |  |
| 21 | 1.20 | Traffic Management Setup |  | 3d | 2025-05-19 | 2025-05-22 |  |  |  | 2025-05-19 | 2025-05-22 | 3d | 0d | Traffic Management Officer; Groundworks Crew | 9.31 | 5 |  |
| 22 | 1.21 | Excavation & Trenching |  | 10d | 2025-05-26 | 2025-06-09 | 21 |  |  | 2025-05-23 | 2025-06-04 | 8d | 0d | Groundworks Crew | 8.62 | 5 |  |
| 23 | 1.22 | Cable Ducting Installation |  | 7d | 2025-06-10 | 2025-06-19 | 22 |  |  | 2025-06-10 | 2025-06-18 | 6d | 0d | Groundworks Crew; Electrical Contractor | 8.5 | 5 |  |
| 24 | 1.23 | Foundation & Bollard Base |  | 7d | 2025-06-23 | 2025-07-02 | 23 |  |  | 2025-06-20 | 2025-06-26 | 4d | 0d | Groundworks Crew | 9.46 | 5 |  |
| 25 | 1.24 | Electrical Cabling & Termination |  | 23d | 2025-07-07 | 2025-08-07 | 24 |  |  | 2025-07-03 | 2025-07-15 | 8d | 0d | Electrical Contractor | 11.54 | 5 |  |
| 26 | 1.25 | Charger Unit Mounting |  | 4d | 2025-08-08 | 2025-08-14 | 25 |  |  | 2025-08-08 | 2025-08-13 | 3d | 0d | Electrical Contractor; Network Commissioning Tech | 8.89 | 5 |  |
| 27 | 1.26 | Reinstatement & Making Good |  | 6d | 2025-08-15 | 2025-08-25 | 26 |  |  | 2025-08-15 | 2025-08-21 | 4d | 0d | Groundworks Crew | 9.74 | 5 |  |
| 28 | 1.27 | Construction Complete Milestone | milestone | 0d | 2025-08-28 | 2025-08-28 | 27 |  |  | 2025-08-26 | 2025-08-26 | 1d | 0d | Project Manager | 10.95 | 5 |  |

Notes:
- 9: Contractor performance issues - schedule impact. Permit approval delayed by local authority review backlog. Charger equipment delivery delayed - supplier backlog.

| ID | WBS | Task | Type | Duration | Start | Finish | Predecessors | Baseline start | Baseline finish | Baseline duration | Total slack | Resources | Cost | Baseline cost |
| --- | --- | --- | --- | --- | --- | --- | --- | --- | --- | --- | --- | --- | --- | --- |
| 29 | 29 | **Commissioning & Handover** |  |  | 2023-08-15 | 2025-11-13 |  |  |  |  |  |  |  |  |
| 30 | 1.29 | Electrical Testing & Certification |  | 19d | 2025-09-02 | 2025-09-29 |  | 2025-08-26 | 2025-09-01 | 4d | 0d | Electrical Contractor; QA Inspector | 9.69 | 5 |
| 31 | 1.30 | Network Connectivity & Software Config |  | 4d | 2025-09-30 | 2025-10-06 | 30 | 2025-09-30 | 2025-10-03 | 3d | 0d | Network Commissioning Tech | 9.8 | 5 |
| 32 | 1.31 | DNO Energisation |  | 12d | 2025-10-07 | 2025-10-23 | 31 | 2025-10-07 | 2025-10-17 | 8d | 0d | Electrical Engineer; DNO Liaison | 8.7 | 5 |
| 33 | 1.32 | User Acceptance Testing |  | 4d | 2025-10-24 | 2025-10-30 | 32 | 2025-10-24 | 2025-10-29 | 3d | 0d | Project Manager; QA Inspector | 8.47 | 5 |
| 34 | 1.33 | Health & Safety Sign-off |  | 1d | 2025-10-31 | 2025-11-03 | 33 | 2025-10-31 | 2025-11-03 | 1d | 0d | Health & Safety Officer | 8.55 | 5 |
| 35 | 1.34 | As-Built Documentation |  | 6d | 2025-11-04 | 2025-11-12 | 34 | 2025-11-04 | 2025-11-10 | 4d | 0d | Civil Engineer; Electrical Engineer | 9.75 | 5 |
| 36 | 1.35 | Project Handover Milestone | milestone | 0d | 2025-11-13 | 2025-11-13 | 35 | 2025-11-13 | 2025-11-13 | 1d | 0d | Project Manager | 9.37 | 5 |
