# Hackney - Cedar Close - 3x 22kW AC Pedestal Installation

Schedule from MS Project XML, 2024-03-13 to 2024-12-09, status date 2024-03-13.

## Resources

| Resource | Rate |
| --- | --- |
| Project Manager | 85 |
| Civil Engineer | 75 |
| Electrical Engineer | 78 |
| Site Surveyor | 55 |
| Permit Coordinator | 50 |
| Groundworks Crew | 45 |
| Electrical Contractor | 65 |
| Network Commissioning Tech | 60 |

## Schedule

| ID | WBS | Task | Type | Duration | Start | Finish | Predecessors | Total slack | Resources | Cost |
| --- | --- | --- | --- | --- | --- | --- | --- | --- | --- | --- |
| 2 | 2 | **Initiation & Planning** |  |  | 2024-03-13 | 2024-12-09 |  |  |  |  |
| 3 | 1.2 | Site Identification & Assessment |  | 5d | 2024-03-13 | 2024-03-20 |  | 0d | Project Manager; Site Surveyor | 5 |
| 4 | 1.3 | Feasibility Study |  | 8d | 2024-03-21 | 2024-04-02 | 3 | 0d | Civil Engineer; Site Surveyor | 5.72 |
| 5 | 1.4 | Stakeholder Consultation |  | 10d | 2024-04-03 | 2024-04-17 | 4 | 0d | Project Manager; Permit Coordinator | 6.9 |
| 6 | 1.5 | DNO Pre-Application |  | 5d | 2024-04-18 | 2024-04-25 | 5 | 0d | Electrical Engineer | 5 |
| 7 | 1.6 | Planning Approval Milestone | milestone | 0d | 2024-04-26 | 2024-04-26 | 6 | 0d | Project Manager | 5 |
| 8 | 8 | **Detailed Design** |  |  | 2024-03-13 | 2024-12-09 |  |  |  |  |
| 9 | 1.8 | Electrical Design & Load Calculations |  | 10d | 2024-04-26 | 2024-05-10 |  | 0d | Electrical Engineer | 6.32 |
| 10 | 1.9 | Civil & Structural Design |  | 8d | 2024-05-13 | 2024-05-23 | 9 | 0d | Civil Engineer | 5 |
| 11 | 1.10 | Traffic Management Plan |  | 5d | 2024-05-24 | 2024-05-31 | 10 | 0d |  | 5 |
| 12 | 1.11 | Design Review & Sign-off |  | 3d | 2024-06-03 | 2024-06-06 | 11 | 0d | Project Manager; Civil Engineer; Electrical Engineer | 5 |
| 13 | 1.12 | Design Complete Milestone | milestone | 0d | 2024-06-07 | 2024-06-07 | 12 | 0d | Project Manager | 5 |
| 14 | 14 | **Procurement & Permits** |  |  | 2024-03-13 | 2024-12-09 |  |  |  |  |
| 15 | 1.14 | Charger Equipment Procurement |  | 21d | 2024-06-07 | 2024-07-08 |  | 0d | Project Manager | 15.13 |
| 16 | 1.15 | Switchgear & Cable Procurement |  | 16d | 2024-07-09 | 2024-07-31 | 15 | 0d | Electrical Engineer | 11.8 |
| 17 | 1.16 | Highway Permit Application (S50/S171) |  | 16d | 2024-08-01 | 2024-08-23 | 16 | 0d | Permit Coordinator | 11.52 |
| 18 | 1.17 | DNO Connection Agreement |  | 21d | 2024-08-26 | 2024-09-24 | 17 | 0d | Electrical Engineer | 15.95 |
| 19 | 1.18 | Permits Secured Milestone | milestone | 0d | 2024-09-25 | 2024-09-25 | 18 | 0d | Permit Coordinator | 5 |
| 20 | 20 | **Construction & Installation** |  |  | 2024-03-13 | 2024-12-09 |  |  |  |  |
| 21 | 1.20 | Traffic Management Setup |  | 2d | 2024-09-25 | 2024-09-27 |  | 0d | Groundworks Crew | 5 |
| 22 | 1.21 | Excavation & Trenching |  | 5d | 2024-09-30 | 2024-10-07 | 21 | 0d | Groundworks Crew | 5 |
| 23 | 1.22 | Cable Ducting Installation |  | 4d | 2024-10-08 | 2024-10-14 | 22 | 0d | Groundworks Crew; Electrical Contractor | 5 |
| 24 | 1.23 | Foundation & Bollard Base |  | 3d | 2024-10-15 | 2024-10-18 | 23 | 0d | Groundworks Crew | 5 |
| 25 | 1.24 | Electrical Cabling & Termination |  | 5d | 2024-10-21 | 2024-10-28 | 24 | 0d | Electrical Contractor | 5 |
| 26 | 1.25 | Charger Unit Mounting |  | 2d | 2024-10-29 | 2024-10-31 | 25 | 0d | Electrical Contractor; Network Commissioning Tech | 5 |
| 27 | 1.26 | Reinstatement & Making Good |  | 3d | 2024-11-01 | 2024-11-06 | 26 | 0d | Groundworks Crew | 5 |
| 28 | 1.27 | Construction Complete Milestone | milestone | 0d | 2024-11-07 | 2024-11-07 | 27 | 0d | Project Manager | 5 |

| ID | WBS | Task | Type | Duration | Start | Finish | Predecessors | Total slack | Resources | Cost |
| --- | --- | --- | --- | --- | --- | --- | --- | --- | --- | --- |
| 29 | 29 | **Commissioning & Handover** |  |  | 2024-03-13 | 2024-12-09 |  |  |  |  |
| 30 | 1.29 | Electrical Testing & Certification |  | 3d | 2024-11-07 | 2024-11-12 |  | 0d | Electrical Contractor | 5 |
| 31 | 1.30 | Network Connectivity & Software Config |  | 2d | 2024-11-13 | 2024-11-15 | 30 | 0d | Network Commissioning Tech | 5 |
| 32 | 1.31 | DNO Energisation |  | 5d | 2024-11-18 | 2024-11-25 | 31 | 0d | Electrical Engineer | 5 |
| 33 | 1.32 | User Acceptance Testing |  | 2d | 2024-11-26 | 2024-11-28 | 32 | 0d | Project Manager | 5 |
| 34 | 1.33 | Health & Safety Sign-off |  | 1d | 2024-11-29 | 2024-12-02 | 33 | 0d |  | 5 |
| 35 | 1.34 | As-Built Documentation |  | 3d | 2024-12-03 | 2024-12-06 | 34 | 0d | Civil Engineer; Electrical Engineer | 5 |
| 36 | 1.35 | Project Handover Milestone | milestone | 0d | 2024-12-09 | 2024-12-09 | 35 | 0d | Project Manager | 5 |
