# Southwark - Station Road - 4x 7kW AC Bollard Installation

Schedule from MS Project XML, 2023-09-21 to 2025-03-24, status date 2026-02-13, A marks actual dates.

## Resources

| Resource | Rate |
| --- | --- |
| Project Manager | 85 |
| Civil Engineer | 75 |
| Electrical Engineer | 78 |
| Site Surveyor | 55 |
| Permit Coordinator | 50 |
| Groundworks Crew | 45 |
| Electrical Contractor | 65 |
| Network Commissioning Tech | 60 |
| Traffic Management Officer | 48 |
| QA Inspector | 58 |

## Schedule

| ID | WBS | Task | Type | Duration | Start | Finish | Predecessors | Complete | Remaining | Baseline start | Baseline finish | Baseline duration | Total slack | Resources | Cost | Baseline cost | Actual cost |
| --- | --- | --- | --- | --- | --- | --- | --- | --- | --- | --- | --- | --- | --- | --- | --- | --- | --- |
| 2 | 2 | **Initiation & Planning** |  |  | 2023-09-21 | 2025-03-24 |  |  |  |  |  |  |  |  |  |  |  |
| 3 | 1.2 | Site Identification & Assessment |  | 8d | 2023-09-21 A | 2023-10-03 A |  | 100% |  | 2023-09-21 | 2023-09-28 | 5d |  | Project Manager; Site Surveyor | 7.68 | 5 | 7.68 |
| 4 | 1.3 | Feasibility Study |  | 12d | 2023-10-04 A | 2023-10-20 A | 3 | 100% |  | 2023-10-04 | 2023-10-17 | 9d |  | Civil Engineer; Site Surveyor | 7.68 | 5 | 7.68 |
| 5 | 1.4 | Stakeholder Consultation |  | 14d | 2023-10-24 A | 2023-11-13 A | 4 | 100% |  | 2023-10-23 | 2023-11-07 | 11d |  | Project Manager; Permit Coordinator | 7.68 | 5 | 7.68 |
| 6 | 1.5 | DNO Pre-Application |  | 5d | 2023-11-14 A | 2023-11-21 A | 5 | 100% |  | 2023-11-14 | 2023-11-21 | 5d |  | Electrical Engineer | 7.68 | 5 | 7.68 |
| 7 | 1.6 | Planning Approval Milestone | milestone | 0d | 2023-11-22 A | 2023-11-22 A | 6 | 100% |  | 2023-11-22 | 2023-11-22 | 1d |  | Project Manager | 7.68 | 5 | 7.68 |
| 8 | 8 | **Detailed Design** |  |  | 2023-09-21 | 2025-03-24 |  |  |  |  |  |  |  |  |  |  |  |
| 9 | 1.8 | Electrical Design & Load Calculations |  | 23d | 2023-11-28 A | 2023-12-29 A |  | 100% |  | 2023-11-22 | 2023-12-07 | 11d |  | Electrical Engineer | 8.85 | 5 | 8.85 |
| 10 | 1.9 | Civil & Structural Design |  | 25d | 2024-01-08 A | 2024-02-12 | 9 | 55% | 11.25d | 2024-01-01 | 2024-01-12 | 9d | 0d | Civil Engineer | 9.02 | 5 | 4.7 |
| 11 | 1.10 | Traffic Management Plan |  | 6d | 2024-02-13 A | 2024-02-21 | 10 | 19% | 4.86d | 2024-02-13 | 2024-02-20 | 5d | 0d | Traffic Management Officer | 7.68 | 5 | 1.35 |
| 12 | 1.11 | Design Review & Sign-off |  | 16d | 2024-02-26 A | 2024-03-19 | 11 | 79% | 3.36d | 2024-02-22 | 2024-02-27 | 3d | 0d | Project Manager; Civil Engineer; Electrical Engineer | 8.5 | 5 | 6.83 |
| 13 | 1.12 | Design Complete Milestone | milestone | 0d | 2024-03-22 | 2024-03-22 | 12 |  |  | 2024-03-20 | 2024-03-20 | 1d | 0d | Project Manager | 9.1 | 5 |  |
| 14 | 14 | **Procurement & Permits** |  |  | 2023-09-21 | 2025-03-24 |  |  |  |  |  |  |  |  |  |  |  |
| 15 | 1.14 | Charger Equipment Procurement |  | 51d | 2024-04-01 | 2024-06-11 |  |  |  | 2024-03-20 | 2024-04-22 | 23d | 0d | Project Manager | 10.16 | 5.65 |  |
| 16 | 1.15 | Switchgear & Cable Procurement |  | 45d | 2024-06-26 | 2024-08-28 | 15 |  |  | 2024-06-12 | 2024-07-05 | 17d | 0d | Electrical Engineer | 11.58 | 5.6 |  |
| 17 | 1.16 | Highway Permit Application (S50/S171) |  | 39d | 2024-08-29 | 2024-10-23 | 16 |  |  | 2024-08-29 | 2024-09-23 | 17d | 0d | Permit Coordinator | 7.84 | 5 |  |
| 18 | 1.17 | DNO Connection Agreement |  | 34d | 2024-10-28 | 2024-12-13 | 17 |  |  | 2024-10-24 | 2024-11-26 | 23d | 0d | Electrical Engineer | 7.76 | 5.05 |  |
| 19 | 1.18 | Permits Secured Milestone | milestone | 0d | 2024-12-30 | 2024-12-30 | 18 |  |  | 2024-12-16 | 2024-12-16 | 1d | 0d | Permit Coordinator | 7.97 | 5 |  |
| 20 | 20 | **Construction & Installation** |  |  | 2023-09-21 | 2025-03-24 |  |  |  |  |  |  |  |  |  |  |  |
| 21 | 1.20 | Traffic Management Setup |  | 3d | 2024-12-16 | 2024-12-19 |  |  |  | 2024-12-16 | 2024-12-18 | 2d | 0d | Traffic Management Officer; Groundworks Crew | 7.68 | 5 |  |
| 22 | 1.21 | Excavation & Trenching |  | 11d | 2024-12-23 | 2025-01-07 | 21 |  |  | 2024-12-20 | 2024-12-27 | 5d | 0d | Groundworks Crew | 9.18 | 5 |  |
| 23 | 1.22 | Cable Ducting Installation |  | 5d | 2025-01-08 | 2025-01-15 | 22 |  |  | 2025-01-08 | 2025-01-14 | 4d | 0d | Groundworks Crew; Electrical Contractor | 7.68 | 5 |  |
| 24 | 1.23 | Foundation & Bollard Base |  | 4d | 2025-01-16 | 2025-01-22 | 23 |  |  | 2025-01-16 | 2025-01-21 | 3d | 0d | Groundworks Crew | 7.68 | 5 |  |
| 25 | 1.24 | Electrical Cabling & Termination |  | 6d | 2025-01-23 | 2025-01-31 | 24 |  |  | 2025-01-23 | 2025-01-30 | 5d | 0d | Electrical Contractor | 7.68 | 5 |  |
| 26 | 1.25 | Charger Unit Mounting |  | 2d | 2025-02-03 | 2025-02-05 | 25 |  |  | 2025-02-03 | 2025-02-05 | 2d | 0d | Electrical Contractor; Network Commissioning Tech | 7.68 | 5 |  |
| 27 | 1.26 | Reinstatement & Making Good |  | 4d | 2025-02-06 | 2025-02-12 | 26 |  |  | 2025-02-06 | 2025-02-11 | 3d | 0d | Groundworks Crew | 7.68 | 5 |  |
| 28 | 1.27 | Construction Complete Milestone | milestone | 0d | 2025-02-13 | 2025-02-13 | 27 |  |  | 2025-02-13 | 2025-02-13 | 1d | 0d | Project Manager | 7.68 | 5 |  |

Notes:
- 9: Uncharted utility strike during excavation. Charger equipment delivery delayed - supplier backlog. Permit approval delayed by local authority review backlog. Design amendments required following review.
- 10: Uncharted utility strike during excavation. Charger equipment delivery delayed - supplier backlog. Permit approval delayed by local authority review backlog. Design amendments required following review.
- 12: Uncharted utility strike during excavation. Charger equipment delivery delayed - supplier backlog. Permit approval delayed by local authority review backlog. Design amendments required following review.

| ID | WBS | Task | Type | Duration | Start | Finish | Predecessors | Baseline start | Baseline finish | Baseline duration | Total slack | Resources | Cost | Baseline cost |
| --- | --- | --- | --- | --- | --- | --- | --- | --- | --- | --- | --- | --- | --- | --- |
| 29 | 29 | **Commissioning & Handover** |  |  | 2023-09-21 | 2025-03-24 |  |  |  |  |  |  |  |  |
| 30 | 1.29 | Electrical Testing & Certification |  | 4d | 2025-02-13 | 2025-02-19 |  | 2025-02-13 | 2025-02-18 | 3d | 0d | Electrical Contractor; QA Inspector | 7.68 | 5 |
| 31 | 1.30 | Network Connectivity & Software Config |  | 2d | 2025-02-20 | 2025-02-24 | 30 | 2025-02-20 | 2025-02-24 | 2d | 0d | Network Commissioning Tech | 7.68 | 5 |
| 32 | 1.31 | DNO Energisation |  | 6d | 2025-02-25 | 2025-03-05 | 31 | 2025-02-25 | 2025-03-04 | 5d | 0d | Electrical Engineer | 7.68 | 5 |
| 33 | 1.32 | User Acceptance Testing |  | 3d | 2025-03-06 | 2025-03-11 | 32 | 2025-03-06 | 2025-03-10 | 2d | 0d | Project Manager; QA Inspector | 7.68 | 5 |
| 34 | 1.33 | Health & Safety Sign-off |  | 1d | 2025-03-12 | 2025-03-13 | 33 | 2025-03-12 | 2025-03-13 | 1d | 0d |  | 7.68 | 5 |
| 35 | 1.34 | As-Built Documentation |  | 5d | 2025-03-14 | 2025-03-21 | 34 | 2025-03-14 | 2025-03-19 | 3d | 0d | Civil Engineer; Electrical Engineer | 7.68 | 5 |
| 36 | 1.35 | Project Handover Milestone | milestone | 0d | 2025-03-24 | 2025-03-24 | 35 | 2025-03-24 | 2025-03-24 | 1d | 0d | Project Manager | 7.68 | 5 |
