# Lambeth - Victoria Road - 8x 22kW AC Pedestal Installation

Schedule from MS Project XML, 2023-02-20 to 2025-01-27, status date 2025-01-27, A marks actual dates.

## Resources

| Resource | Rate |
| --- | --- |
| Project Manager | 85 |
| Civil Engineer | 75 |
| Electrical Engineer | 78 |
| Site Surveyor | 55 |
| Permit Coordinator | 50 |
| Groundworks Crew | 45 |
| Electrical Contractor | 65 |
| Network Commissioning Tech | 60 |
| Traffic Management Officer | 48 |
| QA Inspector | 58 |
| Health & Safety Officer | 52 |
| DNO Liaison | 70 |

## Schedule

| ID | WBS | Task | Type | Duration | Start | Finish | Predecessors | Complete | Baseline start | Baseline finish | Baseline duration | Resources | Cost | Baseline cost | Actual cost |
| --- | --- | --- | --- | --- | --- | --- | --- | --- | --- | --- | --- | --- | --- | --- | --- |
| 2 | 2 | **Initiation & Planning** |  |  | 2023-02-20 | 2025-01-27 |  |  |  |  |  |  |  |  |  |
| 3 | 1.2 | Site Identification & Assessment |  | 8d | 2023-02-20 A | 2023-03-02 A |  | 100% | 2023-02-20 | 2023-03-01 | 7d | Project Manager; Site Surveyor | 16.26 | 12.27 | 16.26 |
| 4 | 1.3 | Feasibility Study |  | 17d | 2023-03-06 A | 2023-03-29 A | 3 | 100% | 2023-03-03 | 2023-03-20 | 11d | Civil Engineer; Site Surveyor | 23.16 | 17.47 | 23.16 |
| 5 | 1.4 | Stakeholder Consultation |  | 20d | 2023-03-30 A | 2023-04-27 A | 4 | 100% | 2023-03-30 | 2023-04-19 | 14d | Project Manager; Permit Coordinator | 26.63 | 20.09 | 26.63 |
| 6 | 1.5 | DNO Pre-Application |  | 10d | 2023-05-01 A | 2023-05-15 A | 5 | 100% | 2023-04-28 | 2023-05-09 | 7d | Electrical Engineer; DNO Liaison | 12.6 | 9.51 | 12.6 |
| 7 | 1.6 | Planning Approval Milestone | milestone | 0d | 2023-05-16 A | 2023-05-16 A | 6 | 100% | 2023-05-16 | 2023-05-16 | 1d | Project Manager | 6.63 | 5 | 6.63 |
| 8 | 8 | **Detailed Design** |  |  | 2023-02-20 | 2025-01-27 |  |  |  |  |  |  |  |  |  |
| 9 | 1.8 | Electrical Design & Load Calculations |  | 27d | 2023-05-18 A | 2023-06-26 A |  | 100% | 2023-05-16 | 2023-06-05 | 14d | Electrical Engineer | 47.58 | 30.09 | 47.58 |
| 10 | 1.9 | Civil & Structural Design |  | 24d | 2023-06-29 A | 2023-08-02 A | 9 | 100% | 2023-06-27 | 2023-07-12 | 11d | Civil Engineer | 35.28 | 20.9 | 35.28 |
| 11 | 1.10 | Traffic Management Plan |  | 12d | 2023-08-07 A | 2023-08-23 A | 10 | 100% | 2023-08-03 | 2023-08-14 | 7d | Traffic Management Officer | 12.51 | 9.44 | 12.51 |
| 12 | 1.11 | Design Review & Sign-off |  | 9d | 2023-08-28 A | 2023-09-08 A | 11 | 100% | 2023-08-24 | 2023-08-30 | 4d | Project Manager; Civil Engineer; Electrical Engineer | 8.61 | 5.28 | 8.61 |
| 13 | 1.12 | Design Complete Milestone | milestone | 0d | 2023-09-13 A | 2023-09-13 A | 12 | 100% | 2023-09-11 | 2023-09-11 | 1d | Project Manager | 8.37 | 5 | 8.37 |
| 14 | 14 | **Procurement & Permits** |  |  | 2023-02-20 | 2025-01-27 |  |  |  |  |  |  |  |  |  |
| 15 | 1.14 | Charger Equipment Procurement |  | 71d | 2023-09-13 A | 2023-12-21 A |  | 100% | 2023-09-11 | 2023-10-20 | 29d | Project Manager | 83.12 | 44.8 | 83.12 |
| 16 | 1.15 | Switchgear & Cable Procurement |  | 69d | 2024-01-08 A | 2024-04-12 A | 15 | 100% | 2023-12-22 | 2024-01-23 | 22d | Electrical Engineer | 95.98 | 46.88 | 95.98 |
| 17 | 1.16 | Highway Permit Application (S50/S171) |  | 31d | 2024-04-18 A | 2024-05-31 A | 16 | 100% | 2024-04-15 | 2024-05-15 | 22d | Permit Coordinator | 36.64 | 27.64 | 36.64 |
| 18 | 1.17 | DNO Connection Agreement |  | 48d | 2024-06-04 A | 2024-08-09 A | 17 | 100% | 2024-06-03 | 2024-07-12 | 29d | Electrical Engineer; DNO Liaison | 81.92 | 61.81 | 81.92 |
| 19 | 1.18 | Permits Secured Milestone | milestone | 0d | 2024-08-12 A | 2024-08-12 A | 18 | 100% | 2024-08-12 | 2024-08-12 | 1d | Permit Coordinator | 6.63 | 5 | 6.63 |
| 20 | 20 | **Construction & Installation** |  |  | 2023-02-20 | 2025-01-27 |  |  |  |  |  |  |  |  |  |
| 21 | 1.20 | Traffic Management Setup |  | 2d | 2024-08-12 A | 2024-08-14 A |  | 100% | 2024-08-12 | 2024-08-14 | 2d | Traffic Management Officer; Groundworks Crew | 6.63 | 5 | 6.63 |
| 22 | 1.21 | Excavation & Trenching |  | 33d | 2024-08-19 A | 2024-10-03 A | 21 | 100% | 2024-08-15 | 2024-08-26 | 7d | Groundworks Crew | 18.32 | 8.34 | 18.32 |
| 23 | 1.22 | Cable Ducting Installation |  | 14d | 2024-10-07 A | 2024-10-25 A | 22 | 100% | 2024-10-04 | 2024-10-11 | 5d | Groundworks Crew; Electrical Contractor | 10.48 | 6.56 | 10.48 |
| 24 | 1.23 | Foundation & Bollard Base |  | 6d | 2024-10-28 A | 2024-11-05 A | 23 | 100% | 2024-10-28 | 2024-11-01 | 4d | Groundworks Crew | 9.54 | 7.2 | 9.54 |
| 25 | 1.24 | Electrical Cabling & Termination |  | 9d | 2024-11-06 A | 2024-11-19 A | 24 | 100% | 2024-11-06 | 2024-11-15 | 7d | Electrical Contractor | 13.74 | 10.37 | 13.74 |
| 26 | 1.25 | Charger Unit Mounting |  | 7d | 2024-11-21 A | 2024-12-02 A | 25 | 100% | 2024-11-20 | 2024-11-22 | 2d | Electrical Contractor; Network Commissioning Tech | 7.87 | 5 | 7.87 |
| 27 | 1.26 | Reinstatement & Making Good |  | 5d | 2024-12-03 A | 2024-12-10 A | 26 | 100% | 2024-12-03 | 2024-12-09 | 4d | Groundworks Crew | 7.69 | 5.8 | 7.69 |
| 28 | 1.27 | Construction Complete Milestone | milestone | 0d | 2024-12-11 A | 2024-12-11 A | 27 | 100% | 2024-12-11 | 2024-12-11 | 1d | Project Manager | 6.63 | 5 | 6.63 |

Notes:
- 10: Uncharted utility strike during excavation. Contaminated ground discovered - remediation required. Charger equipment delivery delayed - supplier backlog.
- 13: Uncharted utility strike during excavation. Contaminated ground discovered - remediation required. Charger equipment delivery delayed - supplier backlog.
- 15: Uncharted utility strike during excavation. Contaminated ground discovered - remediation required. Charger equipment delivery delayed - supplier backlog.
- 16: Uncharted utility strike during excavation. Contaminated ground discovered - remediation required. Charger equipment delivery delayed - supplier backlog.
- 22: Uncharted utility strike during excavation. Contaminated ground discovered - remediation required. Charger equipment delivery delayed - supplier backlog.

| ID | WBS | Task | Type | Duration | Start | Finish | Predecessors | Complete | Baseline start | Baseline finish | Baseline duration | Resources | Cost | Baseline cost | Actual cost |
| --- | --- | --- | --- | --- | --- | --- | --- | --- | --- | --- | --- | --- | --- | --- | --- |
| 29 | 29 | **Commissioning & Handover** |  |  | 2023-02-20 | 2025-01-27 |  |  |  |  |  |  |  |  |  |
| 30 | 1.29 | Electrical Testing & Certification |  | 5d | 2024-12-11 A | 2024-12-18 A |  | 100% | 2024-12-11 | 2024-12-17 | 4d | Electrical Contractor; QA Inspector | 10.02 | 7.56 | 10.02 |
| 31 | 1.30 | Network Connectivity & Software Config |  | 3d | 2024-12-19 A | 2024-12-24 A | 30 | 100% | 2024-12-19 | 2024-12-23 | 2d | Network Commissioning Tech | 6.63 | 5 | 6.63 |
| 32 | 1.31 | DNO Energisation |  | 8d | 2024-12-25 A | 2025-01-06 A | 31 | 100% | 2024-12-25 | 2025-01-03 | 7d | Electrical Engineer; DNO Liaison | 12.92 | 9.74 | 12.92 |
| 33 | 1.32 | User Acceptance Testing |  | 3d | 2025-01-07 A | 2025-01-10 A | 32 | 100% | 2025-01-07 | 2025-01-09 | 2d | Project Manager; QA Inspector | 6.63 | 5 | 6.63 |
| 34 | 1.33 | Health & Safety Sign-off |  | 1d | 2025-01-13 A | 2025-01-14 A | 33 | 100% | 2025-01-13 | 2025-01-14 | 1d | Health & Safety Officer | 6.63 | 5 | 6.63 |
| 35 | 1.34 | As-Built Documentation |  | 7d | 2025-01-15 A | 2025-01-24 A | 34 | 100% | 2025-01-15 | 2025-01-21 | 4d | Civil Engineer; Electrical Engineer | 7.25 | 5.47 | 7.25 |
| 36 | 1.35 | Project Handover Milestone | milestone | 0d | 2025-01-27 A | 2025-01-27 A | 35 | 100% | 2025-01-27 | 2025-01-27 | 1d | Project Manager | 6.63 | 5 | 6.63 |
