# Wandsworth - Oak Drive - 8x 22kW AC Pedestal Installation

Schedule from MS Project XML, 2023-09-20 to 2024-09-09, status date 2026-02-13, A marks actual dates.

## Resources

| Resource | Rate |
| --- | --- |
| Project Manager | 85 |
| Civil Engineer | 75 |
| Electrical Engineer | 78 |
| Site Surveyor | 55 |
| Permit Coordinator | 50 |
| Groundworks Crew | 45 |
| Electrical Contractor | 65 |
| Network Commissioning Tech | 60 |
| Traffic Management Officer | 48 |
| QA Inspector | 58 |
| Health & Safety Officer | 52 |
| DNO Liaison | 70 |

## Schedule

| ID | WBS | Task | Type | Duration | Start | Finish | Predecessors | Complete | Remaining | Baseline start | Baseline finish | Baseline duration | Total slack | Resources | Cost | Baseline cost | Actual cost |
| --- | --- | --- | --- | --- | --- | --- | --- | --- | --- | --- | --- | --- | --- | --- | --- | --- | --- |
| 2 | 2 | **Initiation & Planning** |  |  | 2023-09-20 | 2024-09-09 |  |  |  |  |  |  |  |  |  |  |  |
| 3 | 1.2 | Site Identification & Assessment |  | 7d | 2023-09-20 A | 2023-09-29 A |  | 100% |  | 2023-09-20 | 2023-09-29 | 7d |  | Project Manager; Site Surveyor | 10.29 | 10.51 | 10.29 |
| 4 | 1.3 | Feasibility Study |  | 11d | 2023-10-02 A | 2023-10-17 A | 3 | 100% |  | 2023-10-02 | 2023-10-17 | 11d |  | Civil Engineer; Site Surveyor | 16.53 | 16.88 | 16.53 |
| 5 | 1.4 | Stakeholder Consultation |  | 14d | 2023-10-18 A | 2023-11-07 A | 4 | 100% |  | 2023-10-18 | 2023-11-07 | 14d |  | Project Manager; Permit Coordinator | 22.37 | 22.84 | 22.37 |
| 6 | 1.5 | DNO Pre-Application |  | 7d | 2023-11-08 A | 2023-11-17 A | 5 | 100% |  | 2023-11-08 | 2023-11-17 | 7d |  | Electrical Engineer; DNO Liaison | 14.71 | 15.01 | 14.71 |
| 7 | 1.6 | Planning Approval Milestone | milestone | 0d | 2023-11-20 A | 2023-11-20 A | 6 | 100% |  | 2023-11-20 | 2023-11-20 | 1d |  | Project Manager | 4.9 | 5 | 4.9 |
| 8 | 8 | **Detailed Design** |  |  | 2023-09-20 | 2024-09-09 |  |  |  |  |  |  |  |  |  |  |  |
| 9 | 1.8 | Electrical Design & Load Calculations |  | 14d | 2023-11-20 A | 2023-12-08 A |  | 100% |  | 2023-11-20 | 2023-12-08 | 14d |  | Electrical Engineer | 16.09 | 16.43 | 16.09 |
| 10 | 1.9 | Civil & Structural Design |  | 11d | 2023-12-11 A | 2023-12-26 A | 9 | 100% |  | 2023-12-11 | 2023-12-26 | 11d |  | Civil Engineer | 18.91 | 19.31 | 18.91 |
| 11 | 1.10 | Traffic Management Plan |  | 7d | 2023-12-27 A | 2024-01-05 A | 10 | 100% |  | 2023-12-27 | 2024-01-05 | 7d |  | Traffic Management Officer | 8.35 | 8.52 | 8.35 |
| 12 | 1.11 | Design Review & Sign-off |  | 4d | 2024-01-08 A | 2024-01-12 A | 11 | 100% |  | 2024-01-08 | 2024-01-12 | 4d |  | Project Manager; Civil Engineer; Electrical Engineer | 7.48 | 7.64 | 7.48 |
| 13 | 1.12 | Design Complete Milestone | milestone | 0d | 2024-01-15 A | 2024-01-15 A | 12 | 100% |  | 2024-01-15 | 2024-01-15 | 1d |  | Project Manager | 4.9 | 5 | 4.9 |
| 14 | 14 | **Procurement & Permits** |  |  | 2023-09-20 | 2024-09-09 |  |  |  |  |  |  |  |  |  |  |  |
| 15 | 1.14 | Charger Equipment Procurement |  | 29d | 2024-01-15 A | 2024-02-23 A |  | 100% |  | 2024-01-15 | 2024-02-23 | 29d |  | Project Manager | 39.98 | 40.82 | 39.98 |
| 16 | 1.15 | Switchgear & Cable Procurement |  | 22d | 2024-02-26 A | 2024-03-27 A | 15 | 100% |  | 2024-02-26 | 2024-03-27 | 22d |  | Electrical Engineer | 28.08 | 28.67 | 28.08 |
| 17 | 1.16 | Highway Permit Application (S50/S171) |  | 22d | 2024-03-28 A | 2024-04-29 A | 16 | 100% |  | 2024-03-28 | 2024-04-29 | 22d |  | Permit Coordinator | 31.65 | 32.32 | 31.65 |
| 18 | 1.17 | DNO Connection Agreement |  | 29d | 2024-04-30 A | 2024-06-10 A | 17 | 100% |  | 2024-04-30 | 2024-06-10 | 29d |  | Electrical Engineer; DNO Liaison | 42.65 | 43.54 | 42.65 |
| 19 | 1.18 | Permits Secured Milestone | milestone | 0d | 2024-06-11 A | 2024-06-11 A | 18 | 100% |  | 2024-06-11 | 2024-06-11 | 1d |  | Permit Coordinator | 4.9 | 5 | 4.9 |
| 20 | 20 | **Construction & Installation** |  |  | 2023-09-20 | 2024-09-09 |  |  |  |  |  |  |  |  |  |  |  |
| 21 | 1.20 | Traffic Management Setup |  | 2d | 2024-06-11 A | 2024-06-13 A |  | 100% |  | 2024-06-11 | 2024-06-13 | 2d |  | Traffic Management Officer; Groundworks Crew | 4.9 | 5 | 4.9 |
| 22 | 1.21 | Excavation & Trenching |  | 7d | 2024-06-14 A | 2024-06-25 | 21 | 30% | 4.9d | 2024-06-14 | 2024-06-25 | 7d | 0d | Groundworks Crew | 12.22 | 12.48 | 3.97 |
| 23 | 1.22 | Cable Ducting Installation |  | 5d | 2024-06-26 A | 2024-07-03 | 22 | 72% | 1.4d | 2024-06-26 | 2024-07-03 | 5d | 0d | Groundworks Crew; Electrical Contractor | 9.25 | 9.44 | 7.23 |
| 24 | 1.23 | Foundation & Bollard Base |  | 4d | 2024-07-04 A | 2024-07-10 | 23 | 43% | 2.28d | 2024-07-04 | 2024-07-10 | 4d | 0d | Groundworks Crew | 6.53 | 6.66 | 3.25 |
| 25 | 1.24 | Electrical Cabling & Termination |  | 7d | 2024-07-11 | 2024-07-22 | 24 |  |  | 2024-07-11 | 2024-07-22 | 7d | 0d | Electrical Contractor | 9.32 | 9.52 |  |
| 26 | 1.25 | Charger Unit Mounting |  | 2d | 2024-07-23 | 2024-07-25 | 25 |  |  | 2024-07-23 | 2024-07-25 | 2d | 0d | Electrical Contractor; Network Commissioning Tech | 4.9 | 5 |  |
| 27 | 1.26 | Reinstatement & Making Good |  | 4d | 2024-07-26 | 2024-08-01 | 26 |  |  | 2024-07-26 | 2024-08-01 | 4d | 0d | Groundworks Crew | 7.61 | 7.77 |  |
| 28 | 1.27 | Construction Complete Milestone | milestone | 0d | 2024-08-02 | 2024-08-02 | 27 |  |  | 2024-08-02 | 2024-08-02 | 1d | 0d | Project Manager | 4.9 | 5 |  |

| ID | WBS | Task | Type | Duration | Start | Finish | Predecessors | Baseline start | Baseline finish | Baseline duration | Total slack | Resources | Cost | Baseline cost |
| --- | --- | --- | --- | --- | --- | --- | --- | --- | --- | --- | --- | --- | --- | --- |
| 29 | 29 | **Commissioning & Handover** |  |  | 2023-09-20 | 2024-09-09 |  |  |  |  |  |  |  |  |
| 30 | 1.29 | Electrical Testing & Certification |  | 4d | 2024-08-02 | 2024-08-08 |  | 2024-08-02 | 2024-08-08 | 4d | 0d | Electrical Contractor; QA Inspector | 7.57 | 7.73 |
| 31 | 1.30 | Network Connectivity & Software Config |  | 2d | 2024-08-09 | 2024-08-13 | 30 | 2024-08-09 | 2024-08-13 | 2d | 0d | Network Commissioning Tech | 4.9 | 5 |
| 32 | 1.31 | DNO Energisation |  | 7d | 2024-08-14 | 2024-08-23 | 31 | 2024-08-14 | 2024-08-23 | 7d | 0d | Electrical Engineer; DNO Liaison | 8.75 | 8.94 |
| 33 | 1.32 | User Acceptance Testing |  | 2d | 2024-08-26 | 2024-08-28 | 32 | 2024-08-26 | 2024-08-28 | 2d | 0d | Project Manager; QA Inspector | 4.9 | 5 |
| 34 | 1.33 | Health & Safety Sign-off |  | 1d | 2024-08-29 | 2024-08-30 | 33 | 2024-08-29 | 2024-08-30 | 1d | 0d | Health & Safety Officer | 4.9 | 5 |
| 35 | 1.34 | As-Built Documentation |  | 4d | 2024-09-02 | 2024-09-06 | 34 | 2024-09-02 | 2024-09-06 | 4d | 0d | Civil Engineer; Electrical Engineer | 7.95 | 8.11 |
| 36 | 1.35 | Project Handover Milestone | milestone | 0d | 2024-09-09 | 2024-09-09 | 35 | 2024-09-09 | 2024-09-09 | 1d | 0d | Project Manager | 4.9 | 5 |
