# Kensington - King Street - 7x 50kW DC Rapid Installation

Schedule from MS Project XML, 2023-01-13 to 2024-12-13, status date 2024-12-13, A marks actual dates.

## Resources

| Resource | Rate |
| --- | --- |
| Project Manager | 85 |
| Civil Engineer | 75 |
| Electrical Engineer | 78 |
| Site Surveyor | 55 |
| Permit Coordinator | 50 |
| Groundworks Crew | 45 |
| Electrical Contractor | 65 |
| Network Commissioning Tech | 60 |
| Traffic Management Officer | 48 |
| QA Inspector | 58 |
| Health & Safety Officer | 52 |
| DNO Liaison | 70 |

## Schedule

| ID | WBS | Task | Type | Duration | Start | Finish | Predecessors | Complete | Baseline start | Baseline finish | Baseline duration | Resources | Cost | Baseline cost | Actual cost |
| --- | --- | --- | --- | --- | --- | --- | --- | --- | --- | --- | --- | --- | --- | --- | --- |
| 2 | 2 | **Initiation & Planning** |  |  | 2023-01-13 | 2024-12-13 |  |  |  |  |  |  |  |  |  |
| 3 | 1.2 | Site Identification & Assessment |  | 10d | 2023-01-16 A | 2023-01-30 A |  | 100% | 2023-01-13 | 2023-01-24 | 7d | Project Manager; Site Surveyor | 31.3 | 17.09 | 31.3 |
| 4 | 1.3 | Feasibility Study |  | 18d | 2023-02-03 A | 2023-03-01 A | 3 | 100% | 2023-01-31 | 2023-02-15 | 11d | Civil Engineer; Site Surveyor | 64.32 | 36.66 | 64.32 |
| 5 | 1.4 | Stakeholder Consultation |  | 18d | 2023-03-06 A | 2023-03-30 A | 4 | 100% | 2023-03-02 | 2023-03-22 | 14d | Project Manager; Permit Coordinator | 68.63 | 34.39 | 68.63 |
| 6 | 1.5 | DNO Pre-Application |  | 11d | 2023-04-03 A | 2023-04-18 A | 5 | 100% | 2023-03-31 | 2023-04-11 | 7d | Electrical Engineer; DNO Liaison | 49.43 | 24.08 | 49.43 |
| 7 | 1.6 | Planning Approval Milestone | milestone | 0d | 2023-04-19 A | 2023-04-19 A | 6 | 100% | 2023-04-19 | 2023-04-19 | 1d | Project Manager | 9.59 | 5 | 9.59 |
| 8 | 8 | **Detailed Design** |  |  | 2023-01-13 | 2024-12-13 |  |  |  |  |  |  |  |  |  |
| 9 | 1.8 | Electrical Design & Load Calculations |  | 30d | 2023-04-27 A | 2023-06-08 A |  | 100% | 2023-04-19 | 2023-05-09 | 14d | Electrical Engineer | 104.6 | 35.65 | 104.6 |
| 10 | 1.9 | Civil & Structural Design |  | 43d | 2023-06-23 A | 2023-08-23 A | 9 | 100% | 2023-06-09 | 2023-06-26 | 11d | Civil Engineer | 107.32 | 37.89 | 107.32 |
| 11 | 1.10 | Traffic Management Plan |  | 11d | 2023-08-25 A | 2023-09-11 A | 10 | 100% | 2023-08-24 | 2023-09-04 | 7d | Traffic Management Officer | 47.46 | 28.96 | 47.46 |
| 12 | 1.11 | Design Review & Sign-off |  | 31d | 2023-09-14 A | 2023-10-27 A | 11 | 100% | 2023-09-12 | 2023-09-18 | 4d | Project Manager; Civil Engineer; Electrical Engineer | 40.57 | 13.74 | 40.57 |
| 13 | 1.12 | Design Complete Milestone | milestone | 0d | 2023-10-31 A | 2023-10-31 A | 12 | 100% | 2023-10-30 | 2023-10-30 | 1d | Project Manager | 10.77 | 5 | 10.77 |
| 14 | 14 | **Procurement & Permits** |  |  | 2023-01-13 | 2024-12-13 |  |  |  |  |  |  |  |  |  |
| 15 | 1.14 | Charger Equipment Procurement |  | 49d | 2023-10-30 A | 2024-01-05 A |  | 100% | 2023-10-30 | 2023-12-07 | 28d | Project Manager | 260.49 | 116.12 | 260.49 |
| 16 | 1.15 | Switchgear & Cable Procurement |  | 39d | 2024-01-16 A | 2024-03-11 A | 15 | 100% | 2024-01-08 | 2024-02-06 | 21d | Electrical Engineer | 202.37 | 89.61 | 202.37 |
| 17 | 1.16 | Highway Permit Application (S50/S171) |  | 33d | 2024-03-12 A | 2024-04-26 A | 16 | 100% | 2024-03-12 | 2024-04-10 | 21d | Permit Coordinator | 94.36 | 53.28 | 94.36 |
| 18 | 1.17 | DNO Connection Agreement |  | 45d | 2024-04-30 A | 2024-07-02 A | 17 | 100% | 2024-04-29 | 2024-06-06 | 28d | Electrical Engineer; DNO Liaison | 173.25 | 85.69 | 173.25 |
| 19 | 1.18 | Permits Secured Milestone | milestone | 0d | 2024-07-03 A | 2024-07-03 A | 18 | 100% | 2024-07-03 | 2024-07-03 | 1d | Permit Coordinator | 9.98 | 5 | 9.98 |
| 20 | 20 | **Construction & Installation** |  |  | 2023-01-13 | 2024-12-13 |  |  |  |  |  |  |  |  |  |
| 21 | 1.20 | Traffic Management Setup |  | 2d | 2024-07-03 A | 2024-07-05 A |  | 100% | 2024-07-03 | 2024-07-05 | 2d | Traffic Management Officer; Groundworks Crew | 11.15 | 5.6 | 11.15 |
| 22 | 1.21 | Excavation & Trenching |  | 22d | 2024-07-12 A | 2024-08-13 A | 21 | 100% | 2024-07-08 | 2024-07-17 | 7d | Groundworks Crew | 45.23 | 18.58 | 45.23 |
| 23 | 1.22 | Cable Ducting Installation |  | 16d | 2024-08-19 A | 2024-09-10 A | 22 | 100% | 2024-08-14 | 2024-08-21 | 5d | Groundworks Crew; Electrical Contractor | 46.53 | 18.82 | 46.53 |
| 24 | 1.23 | Foundation & Bollard Base |  | 5d | 2024-09-11 A | 2024-09-18 A | 23 | 100% | 2024-09-11 | 2024-09-17 | 4d | Groundworks Crew | 26.65 | 13.62 | 26.65 |
| 25 | 1.24 | Electrical Cabling & Termination |  | 9d | 2024-09-20 A | 2024-10-03 A | 24 | 100% | 2024-09-19 | 2024-09-30 | 7d | Electrical Contractor | 42.5 | 25.35 | 42.5 |
| 26 | 1.25 | Charger Unit Mounting |  | 9d | 2024-10-07 A | 2024-10-18 A | 25 | 100% | 2024-10-04 | 2024-10-08 | 2d | Electrical Contractor; Network Commissioning Tech | 11.31 | 5.73 | 11.31 |
| 27 | 1.26 | Reinstatement & Making Good |  | 6d | 2024-10-21 A | 2024-10-29 A | 26 | 100% | 2024-10-21 | 2024-10-25 | 4d | Groundworks Crew | 31.54 | 17.28 | 31.54 |
| 28 | 1.27 | Construction Complete Milestone | milestone | 0d | 2024-10-30 A | 2024-10-30 A | 27 | 100% | 2024-10-30 | 2024-10-30 | 1d | Project Manager | 9.88 | 5 | 9.88 |

Notes:
- 9: Contaminated ground discovered - remediation required. Design amendments required following review.
- 10: Contaminated ground discovered - remediation required. Design amendments required following review.
- 12: Contaminated ground discovered - remediation required. Design amendments required following review.
- 13: Contaminated ground discovered - remediation required. Design amendments required following review.
- 16: Contaminated ground discovered - remediation required. Design amendments required following review.
- 22: Contaminated ground discovered - remediation required. Design amendments required following review.
- 23: Contaminated ground discovered - remediation required. Design amendments required following review.
- 26: Contaminated ground discovered - remediation required. Design amendments required following review.

| ID | WBS | Task | Type | Duration | Start | Finish | Predecessors | Complete | Baseline start | Baseline finish | Baseline duration | Resources | Cost | Baseline cost | Actual cost |
| --- | --- | --- | --- | --- | --- | --- | --- | --- | --- | --- | --- | --- | --- | --- | --- |
| 29 | 29 | **Commissioning & Handover** |  |  | 2023-01-13 | 2024-12-13 |  |  |  |  |  |  |  |  |  |
| 30 | 1.29 | Electrical Testing & Certification |  | 6d | 2024-10-30 A | 2024-11-07 A |  | 100% | 2024-10-30 | 2024-11-05 | 4d | Electrical Contractor; QA Inspector | 21.53 | 12.82 | 21.53 |
| 31 | 1.30 | Network Connectivity & Software Config |  | 2d | 2024-11-08 A | 2024-11-12 A | 30 | 100% | 2024-11-08 | 2024-11-12 | 2d | Network Commissioning Tech | 14.71 | 8.34 | 14.71 |
| 32 | 1.31 | DNO Energisation |  | 8d | 2024-11-13 A | 2024-11-25 A | 31 | 100% | 2024-11-13 | 2024-11-22 | 7d | Electrical Engineer; DNO Liaison | 53.76 | 28.48 | 53.76 |
| 33 | 1.32 | User Acceptance Testing |  | 3d | 2024-11-26 A | 2024-11-29 A | 32 | 100% | 2024-11-26 | 2024-11-28 | 2d | Project Manager; QA Inspector | 13.57 | 6.6 | 13.57 |
| 34 | 1.33 | Health & Safety Sign-off |  | 1d | 2024-12-02 A | 2024-12-03 A | 33 | 100% | 2024-12-02 | 2024-12-03 | 1d | Health & Safety Officer | 8.74 | 5 | 8.74 |
| 35 | 1.34 | As-Built Documentation |  | 6d | 2024-12-04 A | 2024-12-12 A | 34 | 100% | 2024-12-04 | 2024-12-10 | 4d | Civil Engineer; Electrical Engineer | 27.78 | 14.89 | 27.78 |
| 36 | 1.35 | Project Handover Milestone | milestone | 0d | 2024-12-13 A | 2024-12-13 A | 35 | 100% | 2024-12-13 | 2024-12-13 | 1d | Project Manager | 8.26 | 5 | 8.26 |
