# Brent - Church Lane - 3x 150kW DC Ultra-Rapid Installation

Schedule from MS Project XML, 2023-10-05 to 2025-02-20, status date 2026-02-13, A marks actual dates.

## Resources

| Resource | Rate |
| --- | --- |
| Project Manager | 85 |
| Civil Engineer | 75 |
| Electrical Engineer | 78 |
| Site Surveyor | 55 |
| Permit Coordinator | 50 |
| Groundworks Crew | 45 |
| Electrical Contractor | 65 |
| Network Commissioning Tech | 60 |

## Schedule

| ID | WBS | Task | Type | Duration | Start | Finish | Predecessors | Complete | Remaining | Baseline start | Baseline finish | Baseline duration | Total slack | Resources | Cost | Baseline cost | Actual cost |
| --- | --- | --- | --- | --- | --- | --- | --- | --- | --- | --- | --- | --- | --- | --- | --- | --- | --- |
| 2 | 2 | **Initiation & Planning** |  |  | 2023-10-05 | 2025-02-20 |  |  |  |  |  |  |  |  |  |  |  |
| 3 | 1.2 | Site Identification & Assessment |  | 6d | 2023-10-05 A | 2023-10-13 A |  | 100% |  | 2023-10-05 | 2023-10-12 | 5d |  | Project Manager; Site Surveyor | 21.38 | 18.16 | 21.38 |
| 4 | 1.3 | Feasibility Study |  | 10d | 2023-10-16 A | 2023-10-30 A | 3 | 100% |  | 2023-10-16 | 2023-10-26 | 8d |  | Civil Engineer; Site Surveyor | 36.93 | 31.37 | 36.93 |
| 5 | 1.4 | Stakeholder Consultation |  | 14d | 2023-11-01 A | 2023-11-21 A | 4 | 100% |  | 2023-10-31 | 2023-11-14 | 10d |  | Project Manager; Permit Coordinator | 57.49 | 48.83 | 57.49 |
| 6 | 1.5 | DNO Pre-Application |  | 6d | 2023-11-22 A | 2023-11-30 A | 5 | 100% |  | 2023-11-22 | 2023-11-29 | 5d |  | Electrical Engineer | 23.56 | 20.02 | 23.56 |
| 7 | 1.6 | Planning Approval Milestone | milestone | 0d | 2023-12-01 A | 2023-12-01 A | 6 | 100% |  | 2023-12-01 | 2023-12-01 | 1d |  | Project Manager | 5.89 | 5 | 5.89 |
| 8 | 8 | **Detailed Design** |  |  | 2023-10-05 | 2025-02-20 |  |  |  |  |  |  |  |  |  |  |  |
| 9 | 1.8 | Electrical Design & Load Calculations |  | 13d | 2023-12-04 A | 2023-12-21 A |  | 100% |  | 2023-12-01 | 2023-12-15 | 10d |  | Electrical Engineer | 58.48 | 49.68 | 58.48 |
| 10 | 1.9 | Civil & Structural Design |  | 9d | 2023-12-22 A | 2024-01-04 A | 9 | 100% |  | 2023-12-22 | 2024-01-03 | 8d |  | Civil Engineer | 34.19 | 29.04 | 34.19 |
| 11 | 1.10 | Traffic Management Plan |  | 6d | 2024-01-05 A | 2024-01-15 A | 10 | 100% |  | 2024-01-05 | 2024-01-12 | 5d |  |  | 24.87 | 21.12 | 24.87 |
| 12 | 1.11 | Design Review & Sign-off |  | 3d | 2024-01-16 A | 2024-01-19 A | 11 | 100% |  | 2024-01-16 | 2024-01-19 | 3d |  | Project Manager; Civil Engineer; Electrical Engineer | 11.96 | 10.16 | 11.96 |
| 13 | 1.12 | Design Complete Milestone | milestone | 0d | 2024-01-22 A | 2024-01-22 | 12 | 69% | 0.31d | 2024-01-22 | 2024-01-22 | 1d | 0d | Project Manager | 5.89 | 5 | 3.68 |
| 14 | 14 | **Procurement & Permits** |  |  | 2023-10-05 | 2025-02-20 |  |  |  |  |  |  |  |  |  |  |  |
| 15 | 1.14 | Charger Equipment Procurement |  | 38d | 2024-01-30 A | 2024-03-22 |  | 58% | 15.96d | 2024-01-22 | 2024-02-20 | 21d | 0d | Project Manager | 137.64 | 97.76 | 90.71 |
| 16 | 1.15 | Switchgear & Cable Procurement |  | 29d | 2024-04-01 | 2024-05-10 | 15 |  |  | 2024-03-25 | 2024-04-16 | 16d | 0d | Electrical Engineer | 92.24 | 65.96 |  |
| 17 | 1.16 | Highway Permit Application (S50/S171) |  | 59d | 2024-05-20 | 2024-08-09 | 16 |  |  | 2024-05-13 | 2024-06-04 | 16d | 0d | Permit Coordinator | 76.45 | 64.9 |  |
| 18 | 1.17 | DNO Connection Agreement |  | 24d | 2024-08-13 | 2024-09-16 | 17 |  |  | 2024-08-12 | 2024-09-10 | 21d | 0d | Electrical Engineer | 126.57 | 107.51 |  |
| 19 | 1.18 | Permits Secured Milestone | milestone | 0d | 2024-09-30 | 2024-09-30 | 18 |  |  | 2024-09-17 | 2024-09-17 | 1d | 0d | Permit Coordinator | 6.05 | 5 |  |
| 20 | 20 | **Construction & Installation** |  |  | 2023-10-05 | 2025-02-20 |  |  |  |  |  |  |  |  |  |  |  |
| 21 | 1.20 | Traffic Management Setup |  | 2d | 2024-09-17 | 2024-09-19 |  |  |  | 2024-09-17 | 2024-09-19 | 2d | 0d | Groundworks Crew | 12.05 | 10.23 |  |
| 22 | 1.21 | Excavation & Trenching |  | 6d | 2024-09-20 | 2024-09-30 | 21 |  |  | 2024-09-20 | 2024-09-27 | 5d | 0d | Groundworks Crew | 20.34 | 17.27 |  |
| 23 | 1.22 | Cable Ducting Installation |  | 26d | 2024-10-03 | 2024-11-08 | 22 |  |  | 2024-10-01 | 2024-10-07 | 4d | 0d | Groundworks Crew; Electrical Contractor | 20.35 | 14.97 |  |
| 24 | 1.23 | Foundation & Bollard Base |  | 4d | 2024-11-11 | 2024-11-15 | 23 |  |  | 2024-11-11 | 2024-11-14 | 3d | 0d | Groundworks Crew | 12.34 | 10.48 |  |
| 25 | 1.24 | Electrical Cabling & Termination |  | 5d | 2024-11-18 | 2024-11-25 | 24 |  |  | 2024-11-18 | 2024-11-25 | 5d | 0d | Electrical Contractor | 19.33 | 16.42 |  |
| 26 | 1.25 | Charger Unit Mounting |  | 24d | 2024-12-09 | 2025-01-10 | 25 |  |  | 2024-11-26 | 2024-11-28 | 2d | 0d | Electrical Contractor; Network Commissioning Tech | 7.45 | 6.03 |  |
| 27 | 1.26 | Reinstatement & Making Good |  | 3d | 2025-01-13 | 2025-01-16 | 26 |  |  | 2025-01-13 | 2025-01-16 | 3d | 0d | Groundworks Crew | 17.21 | 14.62 |  |
| 28 | 1.27 | Construction Complete Milestone | milestone | 0d | 2025-01-17 | 2025-01-17 | 27 |  |  | 2025-01-17 | 2025-01-17 | 1d | 0d | Project Manager | 5.89 | 5 |  |

Notes:
- 15: Key materials on extended lead time. Permit approval delayed by local authority review backlog.

| ID | WBS | Task | Type | Duration | Start | Finish | Predecessors | Baseline start | Baseline finish | Baseline duration | Total slack | Resources | Cost | Baseline cost |
| --- | --- | --- | --- | --- | --- | --- | --- | --- | --- | --- | --- | --- | --- | --- |
| 29 | 29 | **Commissioning & Handover** |  |  | 2023-10-05 | 2025-02-20 |  |  |  |  |  |  |  |  |
| 30 | 1.29 | Electrical Testing & Certification |  | 4d | 2025-01-17 | 2025-01-23 |  | 2025-01-17 | 2025-01-22 | 3d | 0d | Electrical Contractor | 17.52 | 14.88 |
| 31 | 1.30 | Network Connectivity & Software Config |  | 2d | 2025-01-24 | 2025-01-28 | 30 | 2025-01-24 | 2025-01-28 | 2d | 0d | Network Commissioning Tech | 10.33 | 8.78 |
| 32 | 1.31 | DNO Energisation |  | 6d | 2025-01-29 | 2025-02-06 | 31 | 2025-01-29 | 2025-02-05 | 5d | 0d | Electrical Engineer | 25.94 | 22.04 |
| 33 | 1.32 | User Acceptance Testing |  | 2d | 2025-02-07 | 2025-02-11 | 32 | 2025-02-07 | 2025-02-11 | 2d | 0d | Project Manager | 11.13 | 9.45 |
| 34 | 1.33 | Health & Safety Sign-off |  | 1d | 2025-02-12 | 2025-02-13 | 33 | 2025-02-12 | 2025-02-13 | 1d | 0d |  | 5.89 | 5 |
| 35 | 1.34 | As-Built Documentation |  | 3d | 2025-02-14 | 2025-02-19 | 34 | 2025-02-14 | 2025-02-19 | 3d | 0d | Civil Engineer; Electrical Engineer | 16.34 | 13.88 |
| 36 | 1.35 | Project Handover Milestone | milestone | 0d | 2025-02-20 | 2025-02-20 | 35 | 2025-02-20 | 2025-02-20 | 1d | 0d | Project Manager | 5.89 | 5 |
