# Haringey - Victoria Road - 3x 22kW AC Pedestal Installation

Schedule from MS Project XML, 2023-10-19 to 2024-07-16, status date 2026-02-13, A marks actual dates.

## Resources

| Resource | Rate |
| --- | --- |
| Project Manager | 85 |
| Civil Engineer | 75 |
| Electrical Engineer | 78 |
| Site Surveyor | 55 |
| Permit Coordinator | 50 |
| Groundworks Crew | 45 |
| Electrical Contractor | 65 |
| Network Commissioning Tech | 60 |

## Schedule

| ID | WBS | Task | Type | Duration | Start | Finish | Predecessors | Complete | Remaining | Baseline start | Baseline finish | Baseline duration | Total slack | Resources | Cost | Baseline cost | Actual cost |
| --- | --- | --- | --- | --- | --- | --- | --- | --- | --- | --- | --- | --- | --- | --- | --- | --- | --- |
| 2 | 2 | **Initiation & Planning** |  |  | 2023-10-19 | 2024-07-16 |  |  |  |  |  |  |  |  |  |  |  |
| 3 | 1.2 | Site Identification & Assessment |  | 5d | 2023-10-19 A | 2023-10-26 A |  | 100% |  | 2023-10-19 | 2023-10-26 | 5d |  | Project Manager; Site Surveyor | 5.22 | 5 | 5.22 |
| 4 | 1.3 | Feasibility Study |  | 8d | 2023-10-27 A | 2023-11-08 A | 3 | 100% |  | 2023-10-27 | 2023-11-08 | 8d |  | Civil Engineer; Site Surveyor | 6.66 | 6.38 | 6.66 |
| 5 | 1.4 | Stakeholder Consultation |  | 10d | 2023-11-09 A | 2023-11-23 A | 4 | 100% |  | 2023-11-09 | 2023-11-23 | 10d |  | Project Manager; Permit Coordinator | 5.27 | 5.05 | 5.27 |
| 6 | 1.5 | DNO Pre-Application |  | 5d | 2023-11-24 A | 2023-12-01 A | 5 | 100% |  | 2023-11-24 | 2023-12-01 | 5d |  | Electrical Engineer | 5.22 | 5 | 5.22 |
| 7 | 1.6 | Planning Approval Milestone | milestone | 0d | 2023-12-04 A | 2023-12-04 A | 6 | 100% |  | 2023-12-04 | 2023-12-04 | 1d |  | Project Manager | 5.22 | 5 | 5.22 |
| 8 | 8 | **Detailed Design** |  |  | 2023-10-19 | 2024-07-16 |  |  |  |  |  |  |  |  |  |  |  |
| 9 | 1.8 | Electrical Design & Load Calculations |  | 10d | 2023-12-04 A | 2023-12-18 A |  | 100% |  | 2023-12-04 | 2023-12-18 | 10d |  | Electrical Engineer | 7.59 | 7.28 | 7.59 |
| 10 | 1.9 | Civil & Structural Design |  | 8d | 2023-12-19 A | 2023-12-29 A | 9 | 100% |  | 2023-12-19 | 2023-12-29 | 8d |  | Civil Engineer | 5.67 | 5.43 | 5.67 |
| 11 | 1.10 | Traffic Management Plan |  | 5d | 2024-01-01 A | 2024-01-08 A | 10 | 100% |  | 2024-01-01 | 2024-01-08 | 5d |  |  | 5.22 | 5 | 5.22 |
| 12 | 1.11 | Design Review & Sign-off |  | 3d | 2024-01-09 A | 2024-01-12 A | 11 | 100% |  | 2024-01-09 | 2024-01-12 | 3d |  | Project Manager; Civil Engineer; Electrical Engineer | 5.22 | 5 | 5.22 |
| 13 | 1.12 | Design Complete Milestone | milestone | 0d | 2024-01-15 A | 2024-01-15 A | 12 | 100% |  | 2024-01-15 | 2024-01-15 | 1d |  | Project Manager | 5.22 | 5 | 5.22 |
| 14 | 14 | **Procurement & Permits** |  |  | 2023-10-19 | 2024-07-16 |  |  |  |  |  |  |  |  |  |  |  |
| 15 | 1.14 | Charger Equipment Procurement |  | 21d | 2024-01-15 A | 2024-02-13 A |  | 100% |  | 2024-01-15 | 2024-02-13 | 21d |  | Project Manager | 9.74 | 9.33 | 9.74 |
| 16 | 1.15 | Switchgear & Cable Procurement |  | 16d | 2024-02-14 A | 2024-03-07 A | 15 | 100% |  | 2024-02-14 | 2024-03-07 | 16d |  | Electrical Engineer | 11.83 | 11.33 | 11.83 |
| 17 | 1.16 | Highway Permit Application (S50/S171) |  | 16d | 2024-03-08 A | 2024-04-01 A | 16 | 100% |  | 2024-03-08 | 2024-04-01 | 16d |  | Permit Coordinator | 12.35 | 11.83 | 12.35 |
| 18 | 1.17 | DNO Connection Agreement |  | 21d | 2024-04-02 A | 2024-05-01 | 17 | 26% | 15.54d | 2024-04-02 | 2024-05-01 | 21d | 0d | Electrical Engineer | 13.19 | 12.63 | 3.53 |
| 19 | 1.18 | Permits Secured Milestone | milestone | 0d | 2024-05-02 A | 2024-05-02 | 18 | 26% | 0.74d | 2024-05-02 | 2024-05-02 | 1d | 0d | Permit Coordinator | 5.22 | 5 | 1.38 |
| 20 | 20 | **Construction & Installation** |  |  | 2023-10-19 | 2024-07-16 |  |  |  |  |  |  |  |  |  |  |  |
| 21 | 1.20 | Traffic Management Setup |  | 2d | 2024-05-02 | 2024-05-06 |  |  |  | 2024-05-02 | 2024-05-06 | 2d | 0d | Groundworks Crew | 5.22 | 5 |  |
| 22 | 1.21 | Excavation & Trenching |  | 5d | 2024-05-07 | 2024-05-14 | 21 |  |  | 2024-05-07 | 2024-05-14 | 5d | 0d | Groundworks Crew | 5.22 | 5 |  |
| 23 | 1.22 | Cable Ducting Installation |  | 4d | 2024-05-15 | 2024-05-21 | 22 |  |  | 2024-05-15 | 2024-05-21 | 4d | 0d | Groundworks Crew; Electrical Contractor | 5.22 | 5 |  |
| 24 | 1.23 | Foundation & Bollard Base |  | 3d | 2024-05-22 | 2024-05-27 | 23 |  |  | 2024-05-22 | 2024-05-27 | 3d | 0d | Groundworks Crew | 5.22 | 5 |  |
| 25 | 1.24 | Electrical Cabling & Termination |  | 5d | 2024-05-28 | 2024-06-04 | 24 |  |  | 2024-05-28 | 2024-06-04 | 5d | 0d | Electrical Contractor | 5.22 | 5 |  |
| 26 | 1.25 | Charger Unit Mounting |  | 2d | 2024-06-05 | 2024-06-07 | 25 |  |  | 2024-06-05 | 2024-06-07 | 2d | 0d | Electrical Contractor; Network Commissioning Tech | 5.22 | 5 |  |
| 27 | 1.26 | Reinstatement & Making Good |  | 3d | 2024-06-10 | 2024-06-13 | 26 |  |  | 2024-06-10 | 2024-06-13 | 3d | 0d | Groundworks Crew | 5.22 | 5 |  |
| 28 | 1.27 | Construction Complete Milestone | milestone | 0d | 2024-06-14 | 2024-06-14 | 27 |  |  | 2024-06-14 | 2024-06-14 | 1d | 0d | Project Manager | 5.22 | 5 |  |

| ID | WBS | Task | Type | Duration | Start | Finish | Predecessors | Baseline start | Baseline finish | Baseline duration | Total slack | Resources | Cost | Baseline cost |
| --- | --- | --- | --- | --- | --- | --- | --- | --- | --- | --- | --- | --- | --- | --- |
| 29 | 29 | **Commissioning & Handover** |  |  | 2023-10-19 | 2024-07-16 |  |  |  |  |  |  |  |  |
| 30 | 1.29 | Electrical Testing & Certification |  | 3d | 2024-06-14 | 2024-06-19 |  | 2024-06-14 | 2024-06-19 | 3d | 0d | Electrical Contractor | 5.22 | 5 |
| 31 | 1.30 | Network Connectivity & Software Config |  | 2d | 2024-06-20 | 2024-06-24 | 30 | 2024-06-20 | 2024-06-24 | 2d | 0d | Network Commissioning Tech | 5.22 | 5 |
| 32 | 1.31 | DNO Energisation |  | 5d | 2024-06-25 | 2024-07-02 | 31 | 2024-06-25 | 2024-07-02 | 5d | 0d | Electrical Engineer | 5.22 | 5 |
| 33 | 1.32 | User Acceptance Testing |  | 2d | 2024-07-03 | 2024-07-05 | 32 | 2024-07-03 | 2024-07-05 | 2d | 0d | Project Manager | 5.22 | 5 |
| 34 | 1.33 | Health & Safety Sign-off |  | 1d | 2024-07-08 | 2024-07-09 | 33 | 2024-07-08 | 2024-07-09 | 1d | 0d |  | 5.22 | 5 |
| 35 | 1.34 | As-Built Documentation |  | 3d | 2024-07-10 | 2024-07-15 | 34 | 2024-07-10 | 2024-07-15 | 3d | 0d | Civil Engineer; Electrical Engineer | 5.22 | 5 |
| 36 | 1.35 | Project Handover Milestone | milestone | 0d | 2024-07-16 | 2024-07-16 | 35 | 2024-07-16 | 2024-07-16 | 1d | 0d | Project Manager | 5.22 | 5 |
