# Newham - Bridge Street - 7x 150kW DC Ultra-Rapid Installation

Schedule from MS Project XML, 2023-10-23 to 2024-10-04, status date 2026-02-13, A marks actual dates.

## Resources

| Resource | Rate |
| --- | --- |
| Project Manager | 85 |
| Civil Engineer | 75 |
| Electrical Engineer | 78 |
| Site Surveyor | 55 |
| Permit Coordinator | 50 |
| Groundworks Crew | 45 |
| Electrical Contractor | 65 |
| Network Commissioning Tech | 60 |
| Traffic Management Officer | 48 |
| QA Inspector | 58 |
| Health & Safety Officer | 52 |
| DNO Liaison | 70 |

## Schedule

| ID | WBS | Task | Type | Duration | Start | Finish | Predecessors | Complete | Remaining | Baseline start | Baseline finish | Baseline duration | Total slack | Resources | Cost | Baseline cost | Actual cost |
| --- | --- | --- | --- | --- | --- | --- | --- | --- | --- | --- | --- | --- | --- | --- | --- | --- | --- |
| 2 | 2 | **Initiation & Planning** |  |  | 2023-10-23 | 2024-10-04 |  |  |  |  |  |  |  |  |  |  |  |
| 3 | 1.2 | Site Identification & Assessment |  | 7d | 2023-10-23 A | 2023-11-01 A |  | 100% |  | 2023-10-23 | 2023-11-01 | 7d |  | Project Manager; Site Surveyor | 51.41 | 52.8 | 51.41 |
| 4 | 1.3 | Feasibility Study |  | 11d | 2023-11-02 A | 2023-11-17 A | 3 | 100% |  | 2023-11-02 | 2023-11-17 | 11d |  | Civil Engineer; Site Surveyor | 87.38 | 89.75 | 87.38 |
| 5 | 1.4 | Stakeholder Consultation |  | 14d | 2023-11-20 A | 2023-12-08 A | 4 | 100% |  | 2023-11-20 | 2023-12-08 | 14d |  | Project Manager; Permit Coordinator | 129.7 | 133.21 | 129.7 |
| 6 | 1.5 | DNO Pre-Application |  | 7d | 2023-12-11 A | 2023-12-20 A | 5 | 100% |  | 2023-12-11 | 2023-12-20 | 7d |  | Electrical Engineer; DNO Liaison | 81.99 | 84.21 | 81.99 |
| 7 | 1.6 | Planning Approval Milestone | milestone | 0d | 2023-12-21 A | 2023-12-21 A | 6 | 100% |  | 2023-12-21 | 2023-12-21 | 1d |  | Project Manager | 6.93 | 7.12 | 6.93 |
| 8 | 8 | **Detailed Design** |  |  | 2023-10-23 | 2024-10-04 |  |  |  |  |  |  |  |  |  |  |  |
| 9 | 1.8 | Electrical Design & Load Calculations |  | 14d | 2023-12-21 A | 2024-01-10 A |  | 100% |  | 2023-12-21 | 2024-01-10 | 14d |  | Electrical Engineer | 141.37 | 145.19 | 141.37 |
| 10 | 1.9 | Civil & Structural Design |  | 11d | 2024-01-11 A | 2024-01-26 A | 9 | 100% |  | 2024-01-11 | 2024-01-26 | 11d |  | Civil Engineer | 103.88 | 106.69 | 103.88 |
| 11 | 1.10 | Traffic Management Plan |  | 7d | 2024-01-29 A | 2024-02-07 A | 10 | 100% |  | 2024-01-29 | 2024-02-07 | 7d |  | Traffic Management Officer | 73.95 | 75.95 | 73.95 |
| 12 | 1.11 | Design Review & Sign-off |  | 4d | 2024-02-08 A | 2024-02-14 A | 11 | 100% |  | 2024-02-08 | 2024-02-14 | 4d |  | Project Manager; Civil Engineer; Electrical Engineer | 42.93 | 44.09 | 42.93 |
| 13 | 1.12 | Design Complete Milestone | milestone | 0d | 2024-02-15 A | 2024-02-15 A | 12 | 100% |  | 2024-02-15 | 2024-02-15 | 1d |  | Project Manager | 10.34 | 10.62 | 10.34 |
| 14 | 14 | **Procurement & Permits** |  |  | 2023-10-23 | 2024-10-04 |  |  |  |  |  |  |  |  |  |  |  |
| 15 | 1.14 | Charger Equipment Procurement |  | 28d | 2024-02-15 A | 2024-03-26 A |  | 100% |  | 2024-02-15 | 2024-03-26 | 28d |  | Project Manager | 236.32 | 242.72 | 236.32 |
| 16 | 1.15 | Switchgear & Cable Procurement |  | 21d | 2024-03-27 A | 2024-04-25 A | 15 | 100% |  | 2024-03-27 | 2024-04-25 | 21d |  | Electrical Engineer | 156.42 | 160.65 | 156.42 |
| 17 | 1.16 | Highway Permit Application (S50/S171) |  | 21d | 2024-04-26 A | 2024-05-27 A | 16 | 100% |  | 2024-04-26 | 2024-05-27 | 21d |  | Permit Coordinator | 174.61 | 179.34 | 174.61 |
| 18 | 1.17 | DNO Connection Agreement |  | 28d | 2024-05-28 A | 2024-07-05 A | 17 | 100% |  | 2024-05-28 | 2024-07-05 | 28d |  | Electrical Engineer; DNO Liaison | 273.87 | 281.29 | 273.87 |
| 19 | 1.18 | Permits Secured Milestone | milestone | 0d | 2024-07-08 A | 2024-07-08 A | 18 | 100% |  | 2024-07-08 | 2024-07-08 | 1d |  | Permit Coordinator | 10.09 | 10.37 | 10.09 |
| 20 | 20 | **Construction & Installation** |  |  | 2023-10-23 | 2024-10-04 |  |  |  |  |  |  |  |  |  |  |  |
| 21 | 1.20 | Traffic Management Setup |  | 2d | 2024-07-08 A | 2024-07-10 A |  | 100% |  | 2024-07-08 | 2024-07-10 | 2d |  | Traffic Management Officer; Groundworks Crew | 19.65 | 20.18 | 19.65 |
| 22 | 1.21 | Excavation & Trenching |  | 7d | 2024-07-11 A | 2024-07-22 A | 21 | 100% |  | 2024-07-11 | 2024-07-22 | 7d |  | Groundworks Crew | 85.57 | 87.89 | 85.57 |
| 23 | 1.22 | Cable Ducting Installation |  | 5d | 2024-07-23 A | 2024-07-30 | 22 | 49% | 2.55d | 2024-07-23 | 2024-07-30 | 5d | 0d | Groundworks Crew; Electrical Contractor | 38.92 | 39.98 | 19.89 |
| 24 | 1.23 | Foundation & Bollard Base |  | 4d | 2024-07-31 A | 2024-08-06 | 23 | 25% | 3d | 2024-07-31 | 2024-08-06 | 4d | 0d | Groundworks Crew | 37.62 | 38.64 | 10.43 |
| 25 | 1.24 | Electrical Cabling & Termination |  | 7d | 2024-08-07 A | 2024-08-16 | 24 | 31% | 4.83d | 2024-08-07 | 2024-08-16 | 7d | 0d | Electrical Contractor | 63.57 | 65.29 | 22.97 |
| 26 | 1.25 | Charger Unit Mounting |  | 2d | 2024-08-19 | 2024-08-21 | 25 |  |  | 2024-08-19 | 2024-08-21 | 2d | 0d | Electrical Contractor; Network Commissioning Tech | 24.99 | 25.67 |  |
| 27 | 1.26 | Reinstatement & Making Good |  | 4d | 2024-08-22 | 2024-08-28 | 26 |  |  | 2024-08-22 | 2024-08-28 | 4d | 0d | Groundworks Crew | 48.54 | 49.85 |  |
| 28 | 1.27 | Construction Complete Milestone | milestone | 0d | 2024-08-29 | 2024-08-29 | 27 |  |  | 2024-08-29 | 2024-08-29 | 1d | 0d | Project Manager | 12.32 | 12.65 |  |

| ID | WBS | Task | Type | Duration | Start | Finish | Predecessors | Baseline start | Baseline finish | Baseline duration | Total slack | Resources | Cost | Baseline cost |
| --- | --- | --- | --- | --- | --- | --- | --- | --- | --- | --- | --- | --- | --- | --- |
| 29 | 29 | **Commissioning & Handover** |  |  | 2023-10-23 | 2024-10-04 |  |  |  |  |  |  |  |  |
| 30 | 1.29 | Electrical Testing & Certification |  | 4d | 2024-08-29 | 2024-09-04 |  | 2024-08-29 | 2024-09-04 | 4d | 0d | Electrical Contractor; QA Inspector | 45.65 | 46.88 |
| 31 | 1.30 | Network Connectivity & Software Config |  | 2d | 2024-09-05 | 2024-09-09 | 30 | 2024-09-05 | 2024-09-09 | 2d | 0d | Network Commissioning Tech | 19.22 | 19.74 |
| 32 | 1.31 | DNO Energisation |  | 7d | 2024-09-10 | 2024-09-19 | 31 | 2024-09-10 | 2024-09-19 | 7d | 0d | Electrical Engineer; DNO Liaison | 81.46 | 83.66 |
| 33 | 1.32 | User Acceptance Testing |  | 2d | 2024-09-20 | 2024-09-24 | 32 | 2024-09-20 | 2024-09-24 | 2d | 0d | Project Manager; QA Inspector | 22.39 | 22.99 |
| 34 | 1.33 | Health & Safety Sign-off |  | 1d | 2024-09-25 | 2024-09-26 | 33 | 2024-09-25 | 2024-09-26 | 1d | 0d | Health & Safety Officer | 12.03 | 12.36 |
| 35 | 1.34 | As-Built Documentation |  | 4d | 2024-09-27 | 2024-10-03 | 34 | 2024-09-27 | 2024-10-03 | 4d | 0d | Civil Engineer; Electrical Engineer | 50.88 | 52.26 |
| 36 | 1.35 | Project Handover Milestone | milestone | 0d | 2024-10-04 | 2024-10-04 | 35 | 2024-10-04 | 2024-10-04 | 1d | 0d | Project Manager | 10.41 | 10.69 |
