# Croydon - Park Avenue - 8x 22kW AC Pedestal Installation

Schedule from MS Project XML, 2024-02-20 to 2025-02-07, status date 2024-02-20.

## Resources

| Resource | Rate |
| --- | --- |
| Project Manager | 85 |
| Civil Engineer | 75 |
| Electrical Engineer | 78 |
| Site Surveyor | 55 |
| Permit Coordinator | 50 |
| Groundworks Crew | 45 |
| Electrical Contractor | 65 |
| Network Commissioning Tech | 60 |
| Traffic Management Officer | 48 |
| QA Inspector | 58 |
| Health & Safety Officer | 52 |
| DNO Liaison | 70 |

## Schedule

| ID | WBS | Task | Type | Duration | Start | Finish | Predecessors | Baseline start | Baseline finish | Baseline duration | Total slack | Resources | Cost | Baseline cost |
| --- | --- | --- | --- | --- | --- | --- | --- | --- | --- | --- | --- | --- | --- | --- |
| 2 | 2 | **Initiation & Planning** |  |  | 2024-02-20 | 2025-02-07 |  |  |  |  |  |  |  |  |
| 3 | 1.2 | Site Identification & Assessment |  | 7d | 2024-02-20 | 2024-02-29 |  | 2024-02-20 | 2024-02-29 | 7d | 0d | Project Manager; Site Surveyor | 10.52 | 10.52 |
| 4 | 1.3 | Feasibility Study |  | 11d | 2024-03-01 | 2024-03-18 | 3 | 2024-03-01 | 2024-03-18 | 11d | 0d | Civil Engineer; Site Surveyor | 19.48 | 19.48 |
| 5 | 1.4 | Stakeholder Consultation |  | 14d | 2024-03-19 | 2024-04-08 | 4 | 2024-03-19 | 2024-04-08 | 14d | 0d | Project Manager; Permit Coordinator | 27.6 | 27.6 |
| 6 | 1.5 | DNO Pre-Application |  | 7d | 2024-04-09 | 2024-04-18 | 5 | 2024-04-09 | 2024-04-18 | 7d | 0d | Electrical Engineer; DNO Liaison | 11.31 | 11.31 |
| 7 | 1.6 | Planning Approval Milestone | milestone | 0d | 2024-04-19 | 2024-04-19 | 6 | 2024-04-19 | 2024-04-19 | 1d | 0d | Project Manager | 5 | 5 |
| 8 | 8 | **Detailed Design** |  |  | 2024-02-20 | 2025-02-07 |  |  |  |  |  |  |  |  |
| 9 | 1.8 | Electrical Design & Load Calculations |  | 14d | 2024-04-19 | 2024-05-09 |  | 2024-04-19 | 2024-05-09 | 14d | 0d | Electrical Engineer | 26.31 | 26.31 |
| 10 | 1.9 | Civil & Structural Design |  | 11d | 2024-05-10 | 2024-05-27 | 9 | 2024-05-10 | 2024-05-27 | 11d | 0d | Civil Engineer | 17.22 | 17.22 |
| 11 | 1.10 | Traffic Management Plan |  | 7d | 2024-05-28 | 2024-06-06 | 10 | 2024-05-28 | 2024-06-06 | 7d | 0d | Traffic Management Officer | 8.51 | 8.51 |
| 12 | 1.11 | Design Review & Sign-off |  | 4d | 2024-06-07 | 2024-06-13 | 11 | 2024-06-07 | 2024-06-13 | 4d | 0d | Project Manager; Civil Engineer; Electrical Engineer | 5.77 | 5.77 |
| 13 | 1.12 | Design Complete Milestone | milestone | 0d | 2024-06-14 | 2024-06-14 | 12 | 2024-06-14 | 2024-06-14 | 1d | 0d | Project Manager | 5 | 5 |
| 14 | 14 | **Procurement & Permits** |  |  | 2024-02-20 | 2025-02-07 |  |  |  |  |  |  |  |  |
| 15 | 1.14 | Charger Equipment Procurement |  | 29d | 2024-06-14 | 2024-07-25 |  | 2024-06-14 | 2024-07-25 | 29d | 0d | Project Manager | 44.79 | 44.79 |
| 16 | 1.15 | Switchgear & Cable Procurement |  | 22d | 2024-07-26 | 2024-08-27 | 15 | 2024-07-26 | 2024-08-27 | 22d | 0d | Electrical Engineer | 29.13 | 29.13 |
| 17 | 1.16 | Highway Permit Application (S50/S171) |  | 22d | 2024-08-28 | 2024-09-27 | 16 | 2024-08-28 | 2024-09-27 | 22d | 0d | Permit Coordinator | 32.93 | 32.93 |
| 18 | 1.17 | DNO Connection Agreement |  | 29d | 2024-09-30 | 2024-11-08 | 17 | 2024-09-30 | 2024-11-08 | 29d | 0d | Electrical Engineer; DNO Liaison | 44.32 | 44.32 |
| 19 | 1.18 | Permits Secured Milestone | milestone | 0d | 2024-11-11 | 2024-11-11 | 18 | 2024-11-11 | 2024-11-11 | 1d | 0d | Permit Coordinator | 5 | 5 |
| 20 | 20 | **Construction & Installation** |  |  | 2024-02-20 | 2025-02-07 |  |  |  |  |  |  |  |  |
| 21 | 1.20 | Traffic Management Setup |  | 2d | 2024-11-11 | 2024-11-13 |  | 2024-11-11 | 2024-11-13 | 2d | 0d | Traffic Management Officer; Groundworks Crew | 5 | 5 |
| 22 | 1.21 | Excavation & Trenching |  | 7d | 2024-11-14 | 2024-11-25 | 21 | 2024-11-14 | 2024-11-25 | 7d | 0d | Groundworks Crew | 13.54 | 13.54 |
| 23 | 1.22 | Cable Ducting Installation |  | 5d | 2024-11-26 | 2024-12-03 | 22 | 2024-11-26 | 2024-12-03 | 5d | 0d | Groundworks Crew; Electrical Contractor | 8.45 | 8.45 |
| 24 | 1.23 | Foundation & Bollard Base |  | 4d | 2024-12-04 | 2024-12-10 | 23 | 2024-12-04 | 2024-12-10 | 4d | 0d | Groundworks Crew | 5.62 | 5.62 |
| 25 | 1.24 | Electrical Cabling & Termination |  | 7d | 2024-12-11 | 2024-12-20 | 24 | 2024-12-11 | 2024-12-20 | 7d | 0d | Electrical Contractor | 14.92 | 14.92 |
| 26 | 1.25 | Charger Unit Mounting |  | 2d | 2024-12-23 | 2024-12-25 | 25 | 2024-12-23 | 2024-12-25 | 2d | 0d | Electrical Contractor; Network Commissioning Tech | 5 | 5 |
| 27 | 1.26 | Reinstatement & Making Good |  | 4d | 2024-12-26 | 2025-01-01 | 26 | 2024-12-26 | 2025-01-01 | 4d | 0d | Groundworks Crew | 5.71 | 5.71 |
| 28 | 1.27 | Construction Complete Milestone | milestone | 0d | 2025-01-02 | 2025-01-02 | 27 | 2025-01-02 | 2025-01-02 | 1d | 0d | Project Manager | 5 | 5 |

| ID | WBS | Task | Type | Duration | Start | Finish | Predecessors | Baseline start | Baseline finish | Baseline duration | Total slack | Resources | Cost | Baseline cost |
| --- | --- | --- | --- | --- | --- | --- | --- | --- | --- | --- | --- | --- | --- | --- |
| 29 | 29 | **Commissioning & Handover** |  |  | 2024-02-20 | 2025-02-07 |  |  |  |  |  |  |  |  |
| 30 | 1.29 | Electrical Testing & Certification |  | 4d | 2025-01-02 | 2025-01-08 |  | 2025-01-02 | 2025-01-08 | 4d | 0d | Electrical Contractor; QA Inspector | 6.04 | 6.04 |
| 31 | 1.30 | Network Connectivity & Software Config |  | 2d | 2025-01-09 | 2025-01-13 | 30 | 2025-01-09 | 2025-01-13 | 2d | 0d | Network Commissioning Tech | 5 | 5 |
| 32 | 1.31 | DNO Energisation |  | 7d | 2025-01-14 | 2025-01-23 | 31 | 2025-01-14 | 2025-01-23 | 7d | 0d | Electrical Engineer; DNO Liaison | 13.09 | 13.09 |
| 33 | 1.32 | User Acceptance Testing |  | 2d | 2025-01-24 | 2025-01-28 | 32 | 2025-01-24 | 2025-01-28 | 2d | 0d | Project Manager; QA Inspector | 5 | 5 |
| 34 | 1.33 | Health & Safety Sign-off |  | 1d | 2025-01-29 | 2025-01-30 | 33 | 2025-01-29 | 2025-01-30 | 1d | 0d | Health & Safety Officer | 5 | 5 |
| 35 | 1.34 | As-Built Documentation |  | 4d | 2025-01-31 | 2025-02-06 | 34 | 2025-01-31 | 2025-02-06 | 4d | 0d | Civil Engineer; Electrical Engineer | 5.3 | 5.3 |
| 36 | 1.35 | Project Handover Milestone | milestone | 0d | 2025-02-07 | 2025-02-07 | 35 | 2025-02-07 | 2025-02-07 | 1d | 0d | Project Manager | 5 | 5 |
