# Merton - Park Avenue - 6x 22kW AC Pedestal Installation

Schedule from MS Project XML, 2023-08-31 to 2024-10-09, status date 2026-02-13, A marks actual dates.

## Resources

| Resource | Rate |
| --- | --- |
| Project Manager | 85 |
| Civil Engineer | 75 |
| Electrical Engineer | 78 |
| Site Surveyor | 55 |
| Permit Coordinator | 50 |
| Groundworks Crew | 45 |
| Electrical Contractor | 65 |
| Network Commissioning Tech | 60 |
| Traffic Management Officer | 48 |
| QA Inspector | 58 |

## Schedule

| ID | WBS | Task | Type | Duration | Start | Finish | Predecessors | Complete | Remaining | Baseline start | Baseline finish | Baseline duration | Total slack | Resources | Cost | Baseline cost | Actual cost |
| --- | --- | --- | --- | --- | --- | --- | --- | --- | --- | --- | --- | --- | --- | --- | --- | --- | --- |
| 2 | 2 | **Initiation & Planning** |  |  | 2023-08-31 | 2024-10-09 |  |  |  |  |  |  |  |  |  |  |  |
| 3 | 1.2 | Site Identification & Assessment |  | 7d | 2023-08-31 A | 2023-09-11 A |  | 100% |  | 2023-08-31 | 2023-09-08 | 6d |  | Project Manager; Site Surveyor | 9.68 | 8.33 | 9.68 |
| 4 | 1.3 | Feasibility Study |  | 12d | 2023-09-13 A | 2023-09-29 A | 3 | 100% |  | 2023-09-12 | 2023-09-26 | 10d |  | Civil Engineer; Site Surveyor | 17.43 | 15 | 17.43 |
| 5 | 1.4 | Stakeholder Consultation |  | 18d | 2023-10-03 A | 2023-10-27 A | 4 | 100% |  | 2023-10-02 | 2023-10-19 | 13d |  | Project Manager; Permit Coordinator | 16.37 | 14.09 | 16.37 |
| 6 | 1.5 | DNO Pre-Application |  | 6d | 2023-10-30 A | 2023-11-07 A | 5 | 100% |  | 2023-10-30 | 2023-11-07 | 6d |  | Electrical Engineer | 8.14 | 7 | 8.14 |
| 7 | 1.6 | Planning Approval Milestone | milestone | 0d | 2023-11-08 A | 2023-11-08 A | 6 | 100% |  | 2023-11-08 | 2023-11-08 | 1d |  | Project Manager | 5.81 | 5 | 5.81 |
| 8 | 8 | **Detailed Design** |  |  | 2023-08-31 | 2024-10-09 |  |  |  |  |  |  |  |  |  |  |  |
| 9 | 1.8 | Electrical Design & Load Calculations |  | 14d | 2023-11-08 A | 2023-11-28 A |  | 100% |  | 2023-11-08 | 2023-11-27 | 13d |  | Electrical Engineer | 24.08 | 20.72 | 24.08 |
| 10 | 1.9 | Civil & Structural Design |  | 11d | 2023-11-29 A | 2023-12-14 A | 9 | 100% |  | 2023-11-29 | 2023-12-13 | 10d |  | Civil Engineer | 10.89 | 9.38 | 10.89 |
| 11 | 1.10 | Traffic Management Plan |  | 6d | 2023-12-15 A | 2023-12-25 A | 10 | 100% |  | 2023-12-15 | 2023-12-25 | 6d |  | Traffic Management Officer | 11.42 | 9.83 | 11.42 |
| 12 | 1.11 | Design Review & Sign-off |  | 4d | 2023-12-26 A | 2024-01-01 A | 11 | 100% |  | 2023-12-26 | 2023-12-29 | 3d |  | Project Manager; Civil Engineer; Electrical Engineer | 5.81 | 5 | 5.81 |
| 13 | 1.12 | Design Complete Milestone | milestone | 0d | 2024-01-02 A | 2024-01-02 A | 12 | 100% |  | 2024-01-02 | 2024-01-02 | 1d |  | Project Manager | 5.81 | 5 | 5.81 |
| 14 | 14 | **Procurement & Permits** |  |  | 2023-08-31 | 2024-10-09 |  |  |  |  |  |  |  |  |  |  |  |
| 15 | 1.14 | Charger Equipment Procurement |  | 30d | 2024-01-03 A | 2024-02-14 A |  | 100% |  | 2024-01-02 | 2024-02-07 | 26d |  | Project Manager | 42.07 | 36.2 | 42.07 |
| 16 | 1.15 | Switchgear & Cable Procurement |  | 24d | 2024-02-16 A | 2024-03-21 A | 15 | 100% |  | 2024-02-15 | 2024-03-13 | 19d |  | Electrical Engineer | 35.77 | 30.78 | 35.77 |
| 17 | 1.16 | Highway Permit Application (S50/S171) |  | 35d | 2024-03-29 A | 2024-05-17 A | 16 | 100% |  | 2024-03-22 | 2024-04-18 | 19d |  | Permit Coordinator | 27.38 | 22.99 | 27.38 |
| 18 | 1.17 | DNO Connection Agreement |  | 34d | 2024-05-22 A | 2024-07-09 | 17 | 19% | 27.54d | 2024-05-20 | 2024-06-25 | 26d | 0d | Electrical Engineer | 31.12 | 26.79 | 6.04 |
| 19 | 1.18 | Permits Secured Milestone | milestone | 0d | 2024-07-22 A | 2024-07-22 | 18 | 70% | 8.4d | 2024-07-10 | 2024-07-10 | 1d | 0d | Permit Coordinator | 5.86 | 5 | 3.97 |
| 20 | 20 | **Construction & Installation** |  |  | 2023-08-31 | 2024-10-09 |  |  |  |  |  |  |  |  |  |  |  |
| 21 | 1.20 | Traffic Management Setup |  | 2d | 2024-07-10 | 2024-07-12 |  |  |  | 2024-07-10 | 2024-07-12 | 2d | 0d | Traffic Management Officer; Groundworks Crew | 5.81 | 5 |  |
| 22 | 1.21 | Excavation & Trenching |  | 7d | 2024-07-15 | 2024-07-24 | 21 |  |  | 2024-07-15 | 2024-07-23 | 6d | 0d | Groundworks Crew | 6.78 | 5.83 |  |
| 23 | 1.22 | Cable Ducting Installation |  | 6d | 2024-07-25 | 2024-08-02 | 22 |  |  | 2024-07-25 | 2024-08-01 | 5d | 0d | Groundworks Crew; Electrical Contractor | 6.97 | 6 |  |
| 24 | 1.23 | Foundation & Bollard Base |  | 3d | 2024-08-05 | 2024-08-08 | 23 |  |  | 2024-08-05 | 2024-08-08 | 3d | 0d | Groundworks Crew | 5.81 | 5 |  |
| 25 | 1.24 | Electrical Cabling & Termination |  | 8d | 2024-08-12 | 2024-08-22 | 24 |  |  | 2024-08-09 | 2024-08-19 | 6d | 0d | Electrical Contractor | 11.2 | 9.64 |  |
| 26 | 1.25 | Charger Unit Mounting |  | 2d | 2024-08-23 | 2024-08-27 | 25 |  |  | 2024-08-23 | 2024-08-27 | 2d | 0d | Electrical Contractor; Network Commissioning Tech | 5.81 | 5 |  |
| 27 | 1.26 | Reinstatement & Making Good |  | 4d | 2024-08-28 | 2024-09-03 | 26 |  |  | 2024-08-28 | 2024-09-02 | 3d | 0d | Groundworks Crew | 5.81 | 5 |  |
| 28 | 1.27 | Construction Complete Milestone | milestone | 0d | 2024-09-04 | 2024-09-04 | 27 |  |  | 2024-09-04 | 2024-09-04 | 1d | 0d | Project Manager | 5.81 | 5 |  |

Notes:
- 17: Permit approval delayed by local authority review backlog.
- 19: Permit approval delayed by local authority review backlog.

| ID | WBS | Task | Type | Duration | Start | Finish | Predecessors | Baseline start | Baseline finish | Baseline duration | Total slack | Resources | Cost | Baseline cost |
| --- | --- | --- | --- | --- | --- | --- | --- | --- | --- | --- | --- | --- | --- | --- |
| 29 | 29 | **Commissioning & Handover** |  |  | 2023-08-31 | 2024-10-09 |  |  |  |  |  |  |  |  |
| 30 | 1.29 | Electrical Testing & Certification |  | 4d | 2024-09-04 | 2024-09-10 |  | 2024-09-04 | 2024-09-09 | 3d | 0d | Electrical Contractor; QA Inspector | 5.81 | 5 |
| 31 | 1.30 | Network Connectivity & Software Config |  | 2d | 2024-09-11 | 2024-09-13 | 30 | 2024-09-11 | 2024-09-13 | 2d | 0d | Network Commissioning Tech | 5.81 | 5 |
| 32 | 1.31 | DNO Energisation |  | 7d | 2024-09-16 | 2024-09-25 | 31 | 2024-09-16 | 2024-09-24 | 6d | 0d | Electrical Engineer | 8.58 | 7.39 |
| 33 | 1.32 | User Acceptance Testing |  | 2d | 2024-09-26 | 2024-09-30 | 32 | 2024-09-26 | 2024-09-30 | 2d | 0d | Project Manager; QA Inspector | 5.81 | 5 |
| 34 | 1.33 | Health & Safety Sign-off |  | 1d | 2024-10-01 | 2024-10-02 | 33 | 2024-10-01 | 2024-10-02 | 1d | 0d |  | 5.81 | 5 |
| 35 | 1.34 | As-Built Documentation |  | 3d | 2024-10-03 | 2024-10-08 | 34 | 2024-10-03 | 2024-10-08 | 3d | 0d | Civil Engineer; Electrical Engineer | 5.81 | 5 |
| 36 | 1.35 | Project Handover Milestone | milestone | 0d | 2024-10-09 | 2024-10-09 | 35 | 2024-10-09 | 2024-10-09 | 1d | 0d | Project Manager | 5.81 | 5 |
